# Tareas

How a schedule from MS Project changed from version to version. A marks actual dates.

## Version 1 (saved 2016-11-02)

Note of the change: Project iteración 1 - Hito_1

| ID | WBS | Task | Duration | Start | Finish | Predecessors | Total float |
| --- | --- | --- | --- | --- | --- | --- | --- |
| 2 | 1 | **HITO 0** | 27.38d | 2016-09-12 | 2016-10-19 |  | 0d |
| 3 | 1.1 | **Iteración 1** | 7.12d | 2016-09-12 | 2016-09-21 |  | 0d |
| 4 |  | Definir el público objetivo | 6h | 2016-09-12 | 2016-09-12 |  | 0d |
| 5 |  | Definir los problemas y soluciones de esos usuarios | 6h | 2016-09-12 | 2016-09-13 | 4 | 0d |
| 6 |  | Deninir métricas | 5h | 2016-09-13 | 2016-09-14 | 5 | 0d |
| 7 |  | Especificar los costes y los ingresos | 1d | 2016-09-14 | 2016-09-15 | 6 | 0d |
| 8 |  | Definir los canales | 4h | 2016-09-14 | 2016-09-14 | 6 | 0.5d |
| 9 |  | Rellenar documento de Concepto del proyecto | 4d | 2016-09-15 | 2016-09-21 | 6, 7, 8 | 0d |
| 10 |  | * Entregables Iteración 1: LEAN Canvas y especificación del mismo | 0d | 2016-09-12 | 2016-09-12 |  | 7.12d |
| 11 | 1.2 | **Iteración 2** | 10d | 2016-09-21 | 2016-10-05 | 3 | 0d |
| 12 |  | Definir los tipos de usuarios | 4h | 2016-09-21 | 2016-09-21 |  | 0d |
| 13 |  | Definir las interfaces externas | 4h | 2016-09-21 | 2016-09-22 | 12 | 0d |
| 14 | 1.2.3 | **Definir los requisitos funcionales** | 2.62d | 2016-09-22 | 2016-09-26 | 12, 13 | 0d |
| 15 |  | De usuario invitado | 2h | 2016-09-22 | 2016-09-22 |  | 0d |
| 16 |  | De usuario registrado free | 6h | 2016-09-22 | 2016-09-23 | 15 | 0d |
| 17 |  | De usuario registrado premium | 6h | 2016-09-23 | 2016-09-23 | 16 | 0d |
| 18 |  | Del usuario profesor | 4h | 2016-09-23 | 2016-09-26 | 17 | 0d |
| 19 |  | Del usuario tipo Alumno | 3h | 2016-09-26 | 2016-09-26 | 18 | 0d |
| 20 |  | Del Administrador | 3h | 2016-09-23 | 2016-09-26 | 17 | 0.5d |
| 21 |  | Elaborar el Presupuesto (hoja de cálculo) | 5h | 2016-09-26 | 2016-09-27 | 14 | 0d |
| 22 | 1.2.5 | **Requisitos no Funcionales** | 3.5d | 2016-09-27 | 2016-09-30 | 21 | 0d |
| 23 |  | Integridad | 1d | 2016-09-27 | 2016-09-28 |  | 0d |
| 24 |  | Fiabilidad | 5h | 2016-09-28 | 2016-09-28 | 23 | 0d |
| 25 |  | Mantenimiento | 4h | 2016-09-29 | 2016-09-29 | 24 | 0d |
| 26 |  | Privacidad | 5h | 2016-09-29 | 2016-09-30 | 25 | 0d |
| 27 |  | Usabilidad y Accesibilidad | 3h | 2016-09-30 | 2016-09-30 | 26 | 0d |
| 28 |  | Autentificación | 3h | 2016-09-30 | 2016-09-30 | 27 | 0d |
| 29 |  | Definir funcionalidades del sistema(casos de uso) | 4h | 2016-09-30 | 2016-10-03 | 22 | 0d |
| 30 |  | Sketch de la infografía | 1d | 2016-10-03 | 2016-10-04 | 29 | 0d |
| 31 |  | Métricas a utilizar y software del proyecto | 6h | 2016-10-04 | 2016-10-05 | 30 | 0d |
| 32 |  | Especificar API's a utilizar | 3h | 2016-09-26 | 2016-09-27 | 14 | 4.75d |
| 33 |  | Medios de difusión de la plataforma | 3h | 2016-09-27 | 2016-09-27 | 32 | 4.75d |
| 34 |  | Especificar el tipo de contenido de la web | 4h | 2016-09-27 | 2016-09-27 | 33 | 4.75d |
| 35 |  | Definir los derechos de copyright | 3h | 2016-09-28 | 2016-09-28 | 34 | 4.75d |
| 36 |  | * Entregables Iteración 2: Documento de Especificación del proyecto + Hoja de cálculo de presupuesto | 0d | 2016-09-21 | 2016-09-21 |  | 10d |
| 37 | 1.3 | **Iteración 3** | 10.25d | 2016-10-05 | 2016-10-19 | 11 | 0d |
| 38 |  | Observaciones GitHub | 1d | 2016-10-05 | 2016-10-06 |  | 0d |
| 39 |  | Introducir tareas en el Project | 6h | 2016-10-06 | 2016-10-06 | 38 | 0d |
| 40 |  | Arreglar hoja de presupuestos | 6h | 2016-10-06 | 2016-10-07 | 39 | 0d |
| 41 | 1.3.4 | **Mockups del sistema** | 3.75d | 2016-10-07 | 2016-10-13 | 40 | 0d |
| 42 |  | Del usuario no registrado | 5h | 2016-10-07 | 2016-10-10 |  | 0d |
| 43 |  | Del usuario registrado Free | 11h | 2016-10-10 | 2016-10-11 | 42 | 1.75d |
| 44 |  | Del profesor | 11h | 2016-10-10 | 2016-10-11 | 42 | 0d |
| 45 |  | Del usuario Registrado premium | 7h | 2016-10-11 | 2016-10-12 | 44 | 0d |
| 46 |  | Del alumno | 7h | 2016-10-12 | 2016-10-13 | 45 | 0d |
| 47 |  | Rectificar todos los fallos del documentos especificados por el profesor | 1d | 2016-10-06 | 2016-10-07 | 39 | 7.5d |
| 48 |  | Crear diagrama de clases | 11h | 2016-10-13 | 2016-10-14 | 41 | 0d |
| 49 |  | Arquitectura del Sistema | 1d | 2016-10-14 | 2016-10-17 | 48 | 0d |
| 50 |  | Especificación de elementos y tecnologías de seguridad y autenticación | 10h | 2016-10-17 | 2016-10-18 | 49 | 0d |
| 51 |  | Especificación API Rest y del modelo de datos | 3h | 2016-10-13 | 2016-10-13 | 41 | 3.5d |
| 52 |  | Instalar Apache | 3h | 2016-10-19 | 2016-10-19 | 50 | 0d |
| 53 |  | Instalar MySQL | 1h | 2016-10-13 | 2016-10-13 | 51 | 3.5d |
| 54 |  | *Entregables Iteración 3: Documento final de Especificación y Requisitos, Presupuesto y documento con las tareas Project | 0d | 2016-10-05 | 2016-10-05 |  | 10.25d |
| 55 | 2 | **HITO 1** | 29.02d? | 2016-10-19 | 2016-11-29 | 2 | 0d |
| 56 | 2.1 | **Iteración 1** | 10.03d | 2016-10-19 | 2016-11-02 |  | 0d |
| 57 |  | Corregir comentarios Villagra y Berna | 5h | 2016-10-19 | 2016-10-19 |  | 0d |
| 58 | 2.1.2 | **Detallar plan de iteraciones del mes de noviembre** | 1.5d | 2016-10-20 | 2016-10-21 | 57 | 0.03d |
| 59 |  | Crear Subtareas Project | 4h | 2016-10-20 | 2016-10-20 |  | 0.03d |
| 60 |  | Definir procedencias Project | 4h | 2016-10-20 | 2016-10-20 | 59 | 0.03d |
| 61 |  | Crear los recursos en Project | 4h | 2016-10-21 | 2016-10-21 | 60 | 0.03d |
| 62 |  | Realizar MOOC LeanCanvas | 2d | 2016-10-21 | 2016-10-25 | 58 | 0.03d |
| 63 | 2.1.4 | **Configuración e instalación de los elementos de Backend y Seguridad** | 2.5d | 2016-10-25 | 2016-10-27 | 62 | 0.03d |
| 64 |  | Instalación MySQL | 4h | 2016-10-25 | 2016-10-25 |  | 0.03d |
| 65 |  | Configuración Apache | 1d | 2016-10-26 | 2016-10-26 | 64 | 0.03d |
| 66 |  | Crear todas las tablas en la BD | 1d | 2016-10-27 | 2016-10-27 | 65 | 0.03d |
| 67 | 2.1.5 | **Identificar los riesgos** | 3.38d | 2016-10-28 | 2016-11-02 | 63 | 0.03d |
| 68 |  | De Tecnología | 6h | 2016-10-28 | 2016-10-28 |  | 0.03d |
| 69 |  | De Personas | 4h | 2016-10-28 | 2016-10-31 | 68 | 0.03d |
| 70 |  | Organizacional | 4h | 2016-10-31 | 2016-10-31 | 69 | 0.03d |
| 71 |  | Herramientas | 4h | 2016-10-31 | 2016-11-01 | 70 | 0.03d |

| ID | WBS | Task | Duration | Start | Finish | Predecessors | Total float |
| --- | --- | --- | --- | --- | --- | --- | --- |
| 72 |  | De Requerimientos | 4h | 2016-11-01 | 2016-11-01 | 71 | 0.03d |
| 73 |  | De Estimación | 5h | 2016-11-01 | 2016-11-02 | 72 | 0.03d |
| 74 | 2.1.6 | **Empezar con la animación del logo** | 9.4d | 2016-10-20 | 2016-11-02 | 57 | 0d |
| 75 |  | Hacer bocetos del logo | 3.5d | 2016-10-20 | 2016-10-25 |  | 0d |
| 76 |  | Buscar ejemplos de intros | 4d | 2016-10-25 | 2016-10-31 | 75 | 0d |
| 77 |  | Buscar tutoriales de affter efects | 1.9d | 2016-10-31 | 2016-11-02 | 76 | 0d |
| 78 |  | Registrar tiempos y % de realización de tareas | 9.5d | 2016-10-19 | 2016-11-01 |  | 0.03d |
| 79 |  | Comparar la planificación prevista con la real de la iteración 1 | 9.5d | 2016-10-19 | 2016-11-01 |  | 0.03d |
| 80 |  | Confeccionar informe de la iteración 1 | 0.5d | 2016-11-01 | 2016-11-02 | 78, 79 | 0.03d |
| 81 | 2.2 | **Iteración 2** | 10d | 2016-11-02 | 2016-11-16 | 56 | 0d |
| 82 |  | Corregir y rectificar fallos de la iteración anterior | 1d | 2016-11-02 | 2016-11-03 |  | 0.38d |
| 83 | 2.2.2 | **Análisis de Riesgos** | 1.75d | 2016-11-03 | 2016-11-07 | 82 | 0.38d |
| 84 |  | Prioridades de los riesgos | 6h | 2016-11-03 | 2016-11-04 |  | 0.38d |
| 85 |  | Planes de contingencias | 1d | 2016-11-04 | 2016-11-07 | 84 | 0.38d |
| 86 |  | Instalar los elementos de backend y seguridad | 3d | 2016-11-07 | 2016-11-10 | 85 | 0.38d |
| 87 |  | Boceto del diagrama de Flujo de Interfaces | 4h | 2016-11-10 | 2016-11-10 | 86 | 0.38d |
| 88 | 2.2.5 | **Trabajar en el posicionamiento web** | 3.38d | 2016-11-10 | 2016-11-16 | 87 | 0.38d |
| 89 |  | Búsqueda de las palabras clave | 4h | 2016-11-10 | 2016-11-11 |  | 0.38d |
| 90 |  | Definir sinónimos y términos relacionados a esas palabras clave | 4h | 2016-11-11 | 2016-11-11 | 89 | 0.38d |
| 91 |  | Definir técnicas para que la araña de Google visite nuestra wen | 5h | 2016-11-11 | 2016-11-14 | 90 | 0.38d |
| 92 |  | Definir técnicas para aumentar la relevancia | 6h | 2016-11-14 | 2016-11-15 | 91 | 0.38d |
| 93 | 2.2.5.5 | **Aumentar la autoridad web** | 1d | 2016-11-15 | 2016-11-16 | 92 | 0.38d |
| 94 |  | Mediante Linkbuilding | 4h | 2016-11-15 | 2016-11-15 |  | 0.38d |
| 95 |  | Mediante Linkbaiting | 4h | 2016-11-15 | 2016-11-16 | 94 | 0.38d |
| 96 | 2.2.6 | **Hacer bocetos de la animación del logo** | 9d | 2016-11-02 | 2016-11-15 |  | 1d |
| 97 |  | Elegir Logo | 1d | 2016-11-02 | 2016-11-03 |  | 1d |
| 98 |  | Hacer composición básica | 4d | 2016-11-03 | 2016-11-09 | 97 | 1d |
| 99 |  | Probar diferentes efectos | 2d | 2016-11-09 | 2016-11-11 | 98 | 1d |
| 100 |  | Pensar cambios y mejoras | 2d | 2016-11-11 | 2016-11-15 | 99 | 1d |
| 101 |  | Registrar tiempos y % de realización de tareas | 9.5d | 2016-11-02 | 2016-11-15 |  | 0d |
| 102 |  | Comparar la planificación prevista con la real de la iteración 1 | 9.5d | 2016-11-02 | 2016-11-15 |  | 0d |
| 103 |  | Confeccionar informe de la iteración 1 | 0.5d | 2016-11-15 | 2016-11-16 | 102, 101 | 0d |
| 104 |  | Iteración 3 | 1d? | 2016-11-16 | 2016-11-17 | 81 | 0d |
| 105 |  | Iteración 4 | 1d? | 2016-11-17 | 2016-11-18 | 104 | 0d |
| 106 |  | Iteración 5 | 7d | 2016-11-18 | 2016-11-29 | 105 | 0d |
| 108 | 3 | **Colores de las asignaturas** | 0d | 2016-09-12 | 2016-09-12 |  |  |
| 109 |  | Proyecto Multimedia | 0d | 2016-09-12 | 2016-09-12 |  | 54.62d |
| 110 |  | Sistemas de Difusion Multimedia | 0d | 2016-09-12 | 2016-09-12 |  | 54.62d |
| 111 |  | Sistemas Multimedia Basados en Internet | 0d | 2016-09-12 | 2016-09-12 |  | 54.62d |
| 112 |  | E- Learning | 0d | 2016-09-12 | 2016-09-12 |  | 54.62d |
| 113 |  | Sistemas Multimedia Avanzados | 0d | 2016-09-12 | 2016-09-12 |  | 54.62d |
| 114 |  | Postproducción Digital | 0d | 2016-09-12 | 2016-09-12 |  | 54.62d |
| 115 |  | Negocios Multimedia | 0d | 2016-09-12 | 2016-09-12 |  | 54.62d |

## Version 2 (saved 2016-11-14)

Note of the change: Merge branch 'master' of https://github.com/ABPMultimediaUA/ProgrammingCloud

Last finish 2016-11-29 → 2016-12-26 (+27d).

Added:

| ID | Task | Duration | Start | Finish | Predecessors | Resources |
| --- | --- | --- | --- | --- | --- | --- |
| 102 | Comparar la planificación prevista con la real de la iteración 2 | 9.5d | 2016-11-02 12:12 | 2016-11-15 18:12 |  | Jesús [10%]; Antonio [10%]; Ruben [10%]; George [10%] |
| 103 | Confeccionar informe de la iteración 2 | 0.5d | 2016-11-15 18:12 | 2016-11-16 12:12 | 102, 101 | Jesús [20%]; George [20%]; Ruben [20%]; Antonio [20%] |
| 105 | Aplicar el modelo EVA en el proyecto | 1d | 2016-11-16 12:12 | 2016-11-17 12:12 |  |  |
| 106 | Revisar el diagrama del flujo de interfaces | 1d? | 2016-11-16 12:12 | 2016-11-17 12:12 |  |  |
| 107 | **API RESTful** | 1.5d | 2016-11-16 12:12 | 2016-11-17 18:12 |  |  |
| 108 | Instalar Oauth 2.0 | 2h | 2016-11-16 12:12 | 2016-11-16 16:12 |  |  |
| 109 | Hacer pruebas de seguridad | 5h | 2016-11-16 16:12 | 2016-11-17 11:12 | 108 |  |
| 110 | Hacer pruebas de carga | 5h | 2016-11-17 11:12 | 2016-11-17 18:12 | 109 |  |
| 111 | Registrar tiempos y % de realización de tareas | 9.5d | 2016-11-16 12:12 | 2016-11-29 18:12 |  | Jesús [10%]; Antonio [10%]; Ruben [10%]; George [10%] |
| 115 | Registrar tiempos y % de realización de tareas | 9.5d | 2016-11-29 18:12 | 2016-12-13 12:12 |  | Jesús [10%]; Antonio [10%]; Ruben [10%]; George [10%] |
| 116 | Comparar la planificación prevista con la real de la iteración 1 | 9.5d | 2016-11-29 18:12 | 2016-12-13 12:12 |  | Jesús [10%]; Antonio [10%]; Ruben [10%]; George [10%] |
| 117 | Confeccionar informe de la iteración 1 | 0.5d | 2016-11-29 18:12 | 2016-11-30 12:12 |  | Jesús [20%]; George [20%]; Ruben [20%]; Antonio [20%] |
| 119 | Registrar tiempos y % de realización de tareas | 9.5d | 2016-12-13 12:12 | 2016-12-26 18:12 |  | Jesús [10%]; Antonio [10%]; Ruben [10%]; George [10%] |
| 120 | Comparar la planificación prevista con la real de la iteración 1 | 9.5d | 2016-12-13 12:12 | 2016-12-26 18:12 |  | Jesús [10%]; Antonio [10%]; Ruben [10%]; George [10%] |
| 121 | Confeccionar informe de la iteración 1 | 0.5d | 2016-12-13 12:12 | 2016-12-13 18:12 |  | Jesús [20%]; George [20%]; Ruben [20%]; Antonio [20%] |

Changed:

| ID | Task | Start | Finish | Duration |
| --- | --- | --- | --- | --- |
| 2 | **HITO 0** | 2016-09-12 → 2016-09-12 09:00 | 2016-10-19 → 2016-10-19 12:00 |  |
| 3 | **Iteración 1** | 2016-09-12 → 2016-09-12 09:00 | 2016-09-21 → 2016-09-21 10:00 |  |
| 4 | Definir el público objetivo | 2016-09-12 → 2016-09-12 09:00 | 2016-09-12 → 2016-09-12 17:00 |  |
| 5 | Definir los problemas y soluciones de esos usuarios | 2016-09-12 → 2016-09-12 17:00 | 2016-09-13 → 2016-09-13 13:00 |  |
| 6 | Deninir métricas | 2016-09-13 → 2016-09-13 15:00 | 2016-09-14 → 2016-09-14 10:00 |  |
| 7 | Especificar los costes y los ingresos | 2016-09-14 → 2016-09-14 10:00 | 2016-09-15 → 2016-09-15 10:00 |  |
| 8 | Definir los canales | 2016-09-14 → 2016-09-14 10:00 | 2016-09-14 → 2016-09-14 16:00 |  |
| 9 | Rellenar documento de Concepto del proyecto | 2016-09-15 → 2016-09-15 10:00 | 2016-09-21 → 2016-09-21 10:00 |  |
| 10 | * Entregables Iteración 1: LEAN Canvas y especificación del mismo | 2016-09-12 → 2016-09-12 09:00 | 2016-09-12 → 2016-09-12 09:00 |  |
| 11 | **Iteración 2** | 2016-09-21 → 2016-09-21 10:00 | 2016-10-05 → 2016-10-05 10:00 |  |
| 12 | Definir los tipos de usuarios | 2016-09-21 → 2016-09-21 10:00 | 2016-09-21 → 2016-09-21 16:00 |  |
| 13 | Definir las interfaces externas | 2016-09-21 → 2016-09-21 16:00 | 2016-09-22 → 2016-09-22 10:00 |  |
| 14 | **Definir los requisitos funcionales** | 2016-09-22 → 2016-09-22 10:00 | 2016-09-26 → 2016-09-26 17:00 |  |
| 15 | De usuario invitado | 2016-09-22 → 2016-09-22 10:00 | 2016-09-22 → 2016-09-22 12:00 |  |
| 16 | De usuario registrado free | 2016-09-22 → 2016-09-22 12:00 | 2016-09-23 → 2016-09-23 10:00 |  |
| 17 | De usuario registrado premium | 2016-09-23 → 2016-09-23 10:00 | 2016-09-23 → 2016-09-23 18:00 |  |
| 18 | Del usuario profesor | 2016-09-23 → 2016-09-23 18:00 | 2016-09-26 → 2016-09-26 12:00 |  |
| 19 | Del usuario tipo Alumno | 2016-09-26 → 2016-09-26 12:00 | 2016-09-26 → 2016-09-26 17:00 |  |
| 20 | Del Administrador | 2016-09-23 → 2016-09-23 18:00 | 2016-09-26 → 2016-09-26 11:00 |  |
| 21 | Elaborar el Presupuesto (hoja de cálculo) | 2016-09-26 → 2016-09-26 17:00 | 2016-09-27 → 2016-09-27 12:00 |  |
| 22 | **Requisitos no Funcionales** | 2016-09-27 → 2016-09-27 12:00 | 2016-09-30 → 2016-09-30 18:00 |  |
| 23 | Integridad | 2016-09-27 → 2016-09-27 12:00 | 2016-09-28 → 2016-09-28 12:00 |  |
| 24 | Fiabilidad | 2016-09-28 → 2016-09-28 12:00 | 2016-09-28 → 2016-09-28 19:00 |  |
| 25 | Mantenimiento | 2016-09-29 → 2016-09-29 09:00 | 2016-09-29 → 2016-09-29 13:00 |  |
| 26 | Privacidad | 2016-09-29 → 2016-09-29 15:00 | 2016-09-30 → 2016-09-30 10:00 |  |
| 27 | Usabilidad y Accesibilidad | 2016-09-30 → 2016-09-30 10:00 | 2016-09-30 → 2016-09-30 13:00 |  |
| 28 | Autentificación | 2016-09-30 → 2016-09-30 15:00 | 2016-09-30 → 2016-09-30 18:00 |  |
| 29 | Definir funcionalidades del sistema(casos de uso) | 2016-09-30 → 2016-09-30 18:00 | 2016-10-03 → 2016-10-03 12:00 |  |
| 30 | Sketch de la infografía | 2016-10-03 → 2016-10-03 12:00 | 2016-10-04 → 2016-10-04 12:00 |  |
| 31 | Métricas a utilizar y software del proyecto | 2016-10-04 → 2016-10-04 12:00 | 2016-10-05 → 2016-10-05 10:00 |  |
| 32 | Especificar API's a utilizar | 2016-09-26 → 2016-09-26 17:00 | 2016-09-27 → 2016-09-27 10:00 |  |
| 33 | Medios de difusión de la plataforma | 2016-09-27 → 2016-09-27 10:00 | 2016-09-27 → 2016-09-27 13:00 |  |
| 34 | Especificar el tipo de contenido de la web | 2016-09-27 → 2016-09-27 15:00 | 2016-09-27 → 2016-09-27 19:00 |  |
| 35 | Definir los derechos de copyright | 2016-09-28 → 2016-09-28 09:00 | 2016-09-28 → 2016-09-28 12:00 |  |
| 36 | * Entregables Iteración 2: Documento de Especificación del proyecto + Hoja de cálculo de presupuesto | 2016-09-21 → 2016-09-21 10:00 | 2016-09-21 → 2016-09-21 10:00 |  |
| 37 | **Iteración 3** | 2016-10-05 → 2016-10-05 10:00 | 2016-10-19 → 2016-10-19 12:00 |  |
| 38 | Observaciones GitHub | 2016-10-05 → 2016-10-05 10:00 | 2016-10-06 → 2016-10-06 10:00 |  |
| 39 | Introducir tareas en el Project | 2016-10-06 → 2016-10-06 10:00 | 2016-10-06 → 2016-10-06 18:00 |  |
| 40 | Arreglar hoja de presupuestos | 2016-10-06 → 2016-10-06 18:00 | 2016-10-07 → 2016-10-07 16:00 |  |
| 41 | **Mockups del sistema** | 2016-10-07 → 2016-10-07 16:00 | 2016-10-13 → 2016-10-13 12:00 |  |
| 42 | Del usuario no registrado | 2016-10-07 → 2016-10-07 16:00 | 2016-10-10 → 2016-10-10 11:00 |  |
| 43 | Del usuario registrado Free | 2016-10-10 → 2016-10-10 11:00 | 2016-10-11 → 2016-10-11 16:00 |  |
| 44 | Del profesor | 2016-10-10 → 2016-10-10 11:00 | 2016-10-11 → 2016-10-11 16:00 |  |
| 45 | Del usuario Registrado premium | 2016-10-11 → 2016-10-11 16:00 | 2016-10-12 → 2016-10-12 13:00 |  |
| 46 | Del alumno | 2016-10-12 → 2016-10-12 15:00 | 2016-10-13 → 2016-10-13 12:00 |  |
| 47 | Rectificar todos los fallos del documentos especificados por el profesor | 2016-10-06 → 2016-10-06 18:00 | 2016-10-07 → 2016-10-07 18:00 |  |
| 48 | Crear diagrama de clases | 2016-10-13 → 2016-10-13 12:00 | 2016-10-14 → 2016-10-14 17:00 |  |
| 49 | Arquitectura del Sistema | 2016-10-14 → 2016-10-14 17:00 | 2016-10-17 → 2016-10-17 17:00 |  |
| 50 | Especificación de elementos y tecnologías de seguridad y autenticación | 2016-10-17 → 2016-10-17 17:00 | 2016-10-18 → 2016-10-18 19:00 |  |
| 51 | Especificación API Rest y del modelo de datos | 2016-10-13 → 2016-10-13 12:00 | 2016-10-13 → 2016-10-13 17:00 |  |
| 52 | Instalar Apache | 2016-10-19 → 2016-10-19 09:00 | 2016-10-19 → 2016-10-19 12:00 |  |
| 53 | Instalar MySQL | 2016-10-13 → 2016-10-13 17:00 | 2016-10-13 → 2016-10-13 18:00 |  |
| 54 | *Entregables Iteración 3: Documento final de Especificación y Requisitos, Presupuesto y documento con las tareas Project | 2016-10-05 → 2016-10-05 10:00 | 2016-10-05 → 2016-10-05 10:00 |  |
| 55 | **HITO 1** | 2016-10-19 → 2016-10-19 12:00 | 2016-11-29 → 2016-12-26 18:12 (+27d) | 29.02d? → 48.52d? |
| 56 | **Iteración 1** | 2016-10-19 → 2016-10-19 12:00 | 2016-11-02 → 2016-11-02 12:12 |  |
| 57 | Corregir comentarios Villagra y Berna | 2016-10-19 → 2016-10-19 12:00 | 2016-10-19 → 2016-10-19 19:00 |  |
| 58 | **Detallar plan de iteraciones del mes de noviembre** | 2016-10-20 → 2016-10-20 09:00 | 2016-10-21 → 2016-10-21 13:00 |  |
| 59 | Crear Subtareas Project | 2016-10-20 → 2016-10-20 09:00 | 2016-10-20 → 2016-10-20 13:00 |  |
| 60 | Definir procedencias Project | 2016-10-20 → 2016-10-20 15:00 | 2016-10-20 → 2016-10-20 19:00 |  |
| 61 | Crear los recursos en Project | 2016-10-21 → 2016-10-21 09:00 | 2016-10-21 → 2016-10-21 13:00 |  |
| 62 | Realizar MOOC LeanCanvas | 2016-10-21 → 2016-10-21 15:00 | 2016-10-25 → 2016-10-25 13:00 |  |
| 63 | **Configuración e instalación de los elementos de Backend y Seguridad** | 2016-10-25 → 2016-10-25 15:00 | 2016-10-27 → 2016-10-27 19:00 |  |
| 64 | Instalación MySQL | 2016-10-25 → 2016-10-25 15:00 | 2016-10-25 → 2016-10-25 19:00 |  |
| 65 | Configuración Apache | 2016-10-26 → 2016-10-26 09:00 | 2016-10-26 → 2016-10-26 19:00 |  |
| 66 | Crear todas las tablas en la BD | 2016-10-27 → 2016-10-27 09:00 | 2016-10-27 → 2016-10-27 19:00 |  |
| 67 | **Identificar los riesgos** | 2016-10-28 → 2016-10-28 09:00 | 2016-11-02 → 2016-11-02 12:00 |  |
| 68 | De Tecnología | 2016-10-28 → 2016-10-28 09:00 | 2016-10-28 → 2016-10-28 17:00 |  |
| 69 | De Personas | 2016-10-28 → 2016-10-28 17:00 | 2016-10-31 → 2016-10-31 11:00 |  |
| 70 | Organizacional | 2016-10-31 → 2016-10-31 11:00 | 2016-10-31 → 2016-10-31 17:00 |  |
| 71 | Herramientas | 2016-10-31 → 2016-10-31 17:00 | 2016-11-01 → 2016-11-01 11:00 |  |

| ID | Task | Start | Finish | Duration | Total float | Predecessors |
| --- | --- | --- | --- | --- | --- | --- |
| 72 | De Requerimientos | 2016-11-01 → 2016-11-01 11:00 | 2016-11-01 → 2016-11-01 17:00 |  |  |  |
| 73 | De Estimación | 2016-11-01 → 2016-11-01 17:00 | 2016-11-02 → 2016-11-02 12:00 |  |  |  |
| 74 | **Empezar con la animación del logo** | 2016-10-20 → 2016-10-20 09:00 | 2016-11-02 → 2016-11-02 12:12 |  |  |  |
| 75 | Hacer bocetos del logo | 2016-10-20 → 2016-10-20 09:00 | 2016-10-25 → 2016-10-25 13:00 |  |  |  |
| 76 | Buscar ejemplos de intros | 2016-10-25 → 2016-10-25 15:00 | 2016-10-31 → 2016-10-31 13:00 |  |  |  |
| 77 | Buscar tutoriales de affter efects | 2016-10-31 → 2016-10-31 15:00 | 2016-11-02 → 2016-11-02 12:12 |  |  |  |
| 78 | Registrar tiempos y % de realización de tareas | 2016-10-19 → 2016-10-19 12:00 | 2016-11-01 → 2016-11-01 18:00 |  |  |  |
| 79 | Comparar la planificación prevista con la real de la iteración 1 | 2016-10-19 → 2016-10-19 12:00 | 2016-11-01 → 2016-11-01 18:00 |  |  |  |
| 80 | Confeccionar informe de la iteración 1 | 2016-11-01 → 2016-11-01 18:00 | 2016-11-02 → 2016-11-02 12:00 |  |  |  |
| 81 | **Iteración 2** | 2016-11-02 → 2016-11-02 12:12 | 2016-11-16 → 2016-11-16 12:12 |  |  |  |
| 82 | Corregir y rectificar fallos de la iteración anterior | 2016-11-02 → 2016-11-02 12:12 | 2016-11-03 → 2016-11-03 12:12 |  |  |  |
| 83 | **Análisis de Riesgos** | 2016-11-03 → 2016-11-03 12:12 | 2016-11-07 → 2016-11-07 10:12 |  |  |  |
| 84 | Prioridades de los riesgos | 2016-11-03 → 2016-11-03 12:12 | 2016-11-04 → 2016-11-04 10:12 |  |  |  |
| 85 | Planes de contingencias | 2016-11-04 → 2016-11-04 10:12 | 2016-11-07 → 2016-11-07 10:12 |  |  |  |
| 86 | Instalar los elementos de backend y seguridad | 2016-11-07 → 2016-11-07 10:12 | 2016-11-10 → 2016-11-10 10:12 |  |  |  |
| 87 | Boceto del diagrama de Flujo de Interfaces | 2016-11-10 → 2016-11-10 10:12 | 2016-11-10 → 2016-11-10 16:12 |  |  |  |
| 88 | **Trabajar en el posicionamiento web** | 2016-11-10 → 2016-11-10 16:12 | 2016-11-16 → 2016-11-16 09:12 |  |  |  |
| 89 | Búsqueda de las palabras clave | 2016-11-10 → 2016-11-10 16:12 | 2016-11-11 → 2016-11-11 10:12 |  |  |  |
| 90 | Definir sinónimos y términos relacionados a esas palabras clave | 2016-11-11 → 2016-11-11 10:12 | 2016-11-11 → 2016-11-11 16:12 |  |  |  |
| 91 | Definir técnicas para que la araña de Google visite nuestra wen | 2016-11-11 → 2016-11-11 16:12 | 2016-11-14 → 2016-11-14 11:12 |  |  |  |
| 92 | Definir técnicas para aumentar la relevancia | 2016-11-14 → 2016-11-14 11:12 | 2016-11-15 → 2016-11-15 09:12 |  |  |  |
| 93 | **Aumentar la autoridad web** | 2016-11-15 → 2016-11-15 09:12 | 2016-11-16 → 2016-11-16 09:12 |  |  |  |
| 94 | Mediante Linkbuilding | 2016-11-15 → 2016-11-15 09:12 | 2016-11-15 → 2016-11-15 15:12 |  |  |  |
| 95 | Mediante Linkbaiting | 2016-11-15 → 2016-11-15 15:12 | 2016-11-16 → 2016-11-16 09:12 |  |  |  |
| 96 | **Hacer bocetos de la animación del logo** | 2016-11-02 → 2016-11-02 12:12 | 2016-11-15 → 2016-11-15 12:12 |  |  |  |
| 97 | Elegir Logo | 2016-11-02 → 2016-11-02 12:12 | 2016-11-03 → 2016-11-03 12:12 |  |  |  |
| 98 | Hacer composición básica | 2016-11-03 → 2016-11-03 12:12 | 2016-11-09 → 2016-11-09 12:12 |  |  |  |
| 99 | Probar diferentes efectos | 2016-11-09 → 2016-11-09 12:12 | 2016-11-11 → 2016-11-11 12:12 |  |  |  |
| 100 | Pensar cambios y mejoras | 2016-11-11 → 2016-11-11 12:12 | 2016-11-15 → 2016-11-15 12:12 |  |  |  |
| 101 | Registrar tiempos y % de realización de tareas | 2016-11-02 → 2016-11-02 12:12 | 2016-11-15 → 2016-11-15 18:12 |  |  |  |
| 104 | **Iteración 3** | 2016-11-16 → 2016-11-16 12:12 | 2016-11-17 → 2016-11-29 18:12 (+12d) | 1d? → 9.5d? |  |  |
| 112 | Comparar la planificación prevista con la real de la iteración 1 | 2016-11-02 → 2016-11-16 12:12 (+14d) | 2016-11-15 → 2016-11-29 18:12 (+14d) |  |  |  |
| 113 | Confeccionar informe de la iteración 1 | 2016-11-15 → 2016-11-16 12:12 (+1d) | 2016-11-16 → 2016-11-16 18:12 |  | 0d → 9d | 112, 101 → none |
| 114 | **Iteración 4** | 2016-11-17 → 2016-11-29 18:12 (+12d) | 2016-11-18 → 2016-12-13 12:12 (+25d) | 1d? → 9.5d |  |  |
| 118 | **Iteración 5** | 2016-11-18 → 2016-12-13 12:12 (+25d) | 2016-11-29 → 2016-12-26 18:12 (+27d) | 7d → 9.5d |  |  |
| 123 | **Colores de las asignaturas** | 2016-09-12 → 2016-09-12 09:00 | 2016-09-12 → 2016-09-12 09:00 |  |  |  |
| 124 | Proyecto Multimedia | 2016-09-12 → 2016-09-12 09:00 | 2016-09-12 → 2016-09-12 09:00 |  | 54.62d → 75.9d |  |
| 125 | Sistemas de Difusion Multimedia | 2016-09-12 → 2016-09-12 09:00 | 2016-09-12 → 2016-09-12 09:00 |  | 54.62d → 75.9d |  |
| 126 | Sistemas Multimedia Basados en Internet | 2016-09-12 → 2016-09-12 09:00 | 2016-09-12 → 2016-09-12 09:00 |  | 54.62d → 75.9d |  |
| 127 | E- Learning | 2016-09-12 → 2016-09-12 09:00 | 2016-09-12 → 2016-09-12 09:00 |  | 54.62d → 75.9d |  |
| 128 | Sistemas Multimedia Avanzados | 2016-09-12 → 2016-09-12 09:00 | 2016-09-12 → 2016-09-12 09:00 |  | 54.62d → 75.9d |  |
| 129 | Postproducción Digital | 2016-09-12 → 2016-09-12 09:00 | 2016-09-12 → 2016-09-12 09:00 |  | 54.62d → 75.9d |  |
| 130 | Negocios Multimedia | 2016-09-12 → 2016-09-12 09:00 | 2016-09-12 → 2016-09-12 09:00 |  | 54.62d → 75.9d |  |

## Version 3 (saved 2016-11-16)

Note of the change: Project con todas las tareas de las iteraciones del Hito 1 y los recursos asignados

Last finish 2016-12-26 → 2016-12-23 (-3d). Complete tasks 0 → 36.

Added:

| ID | Task | Duration | Start | Finish | Predecessors | Constraint | Resources |
| --- | --- | --- | --- | --- | --- | --- | --- |
| 105 | Rellenar las tareas de las iteraciones 3,4 y 5 | 8.8h | 2016-11-16 A | 2016-11-17 A |  |  | George |
| 106 | Crear informe SDM | 2h | 2016-11-17 A | 2016-11-17 A | 105 |  | George |
| 107 | Crear PPW presentación | 3h | 2016-11-17 A | 2016-11-18 A | 106 |  | Jesús [40%] |
| 108 | Informe del seguimiento | 4h | 2016-11-18 A | 2016-11-18 A | 107 |  | Antonio; George [90%] |
| 114 | Instalar todas las tecnologías de Back-End | 1d | 2016-11-23 | 2016-11-24 | 110 |  | Antonio [40%]; George [80%] |
| 115 | Prueba Front-End | 4h | 2016-11-24 | 2016-11-24 | 114 |  | George [80%]; Antonio [80%] |
| 116 | **Definir los APIs** | 2d | 2016-11-24 | 2016-11-28 | 115 |  |  |
| 117 | Propios | 1d | 2016-11-24 | 2016-11-25 |  |  | Antonio [80%]; Dani [50%]; Jesús; George [80%] |
| 118 | De terceros | 1d | 2016-11-25 | 2016-11-28 | 117 |  | Dani [50%]; Antonio [80%]; George [80%] |
| 119 | Definir la transformación de formato: pdf - Audio | 1d | 2016-11-28 | 2016-11-29 | 116 |  | Dani [50%]; Jesús; Antonio [80%]; George [80%] |
| 120 | **Course Builder** | 2.25d | 2016-11-16 A | 2016-11-18 |  |  |  |
| 121 | Instalar máquina virtual | 4h | 2016-11-16 A | 2016-11-16 A |  |  | Dani [50%]; Sergio; Jesús; Antonio |
| 122 | Instalar paquetes CourseBuilder | 4h | 2016-11-16 | 2016-11-17 | 121 |  | Dani [50%]; Sergio; Jesús; Antonio |
| 123 | Subir al servidor de Google | 10h | 2016-11-17 | 2016-11-18 | 122 |  | Dani [50%]; Sergio; Jesús [40%]; Antonio [40%] |
| 124 | **Curso MOOClearning(1º)** | 3d | 2016-11-21 | 2016-11-23 | 120 |  |  |
| 125 | Crear la base del curs | 1d | 2016-11-21 | 2016-11-21 |  |  | Dani [50%]; Sergio; Antonio [40%]; Jesús [80%] |
| 126 | Crear las lecciones | 1d | 2016-11-22 | 2016-11-22 | 125 |  | Dani [50%]; Sergio; Antonio [40%]; Jesús [80%] |
| 127 | Crear las unidades | 1d | 2016-11-23 | 2016-11-23 | 126 |  | Dani [50%]; Sergio; Antonio [40%]; Jesús [80%] |
| 128 | **Acabar animación del logo** | 10d | 2016-11-16 | 2016-11-30 |  |  |  |
| 129 | Poner efecto al Logo | 2d | 2016-11-16 | 2016-11-18 |  |  | Ruben [80%]; Dani [50%] |
| 130 | Añadir efectos a la composición | 4d | 2016-11-18 | 2016-11-24 | 129 |  | Ruben [80%]; Dani [50%] |
| 131 | Hacer ajustes de efectos | 2d | 2016-11-24 | 2016-11-28 | 130 |  | Ruben [80%]; Dani [50%] |
| 132 | Rematar animación y exportar | 2d | 2016-11-28 | 2016-11-30 | 131 |  | Ruben [80%]; Dani [50%] |
| 137 | **Estimación de costes** | 3d | 2016-11-30 | 2016-12-05 |  |  |  |
| 138 | 80 | 6h | 2016-11-30 | 2016-12-01 |  |  | George [80%] |
| 139 | Pricing to win | 6h | 2016-12-01 | 2016-12-01 | 138 |  | Antonio [40%] |
| 140 | Puntos Objetivo y/o Puntos de Función | 6h | 2016-12-01 | 2016-12-02 | 139 |  | Jesús [40%] |
| 141 | Comparación y discución de los valores obtenidos | 6h | 2016-12-02 | 2016-12-05 | 140 |  | Antonio [40%]; George [80%]; Jesús [40%] |
| 142 | **Pruebas BackEnd** | 3d | 2016-12-05 | 2016-12-08 | 137 |  |  |
| 143 | De Seguridad | 1d | 2016-12-05 | 2016-12-06 |  |  | Antonio [40%]; George [80%] |
| 144 | De carga | 1d | 2016-12-06 | 2016-12-07 | 143 |  | Antonio [40%]; George [80%] |
| 145 | De rendimiento | 1d | 2016-12-07 | 2016-12-08 | 144 |  | Antonio [40%]; George [80%] |
| 146 | Validar el funcionamiento del BackEnd | 5h | 2016-12-08 | 2016-12-09 | 142 |  | Antonio [40%]; George [80%] |
| 147 | Delegar autorización Oauth 2.0 | 5h | 2016-12-09 | 2016-12-09 | 146 |  | Antonio [40%]; George [80%] |
| 148 | Diagrama de flujo de interfaces completado | 1d | 2016-12-09 | 2016-12-12 | 147 |  |  |
| 149 | **Curso MOOClearning(2º y 3º)** | 6d | 2016-11-30 | 2016-12-08 |  |  |  |
| 150 | Crear la base del curs | 2d | 2016-11-30 | 2016-12-02 |  |  | Antonio [40%]; Dani [40%]; Sergio; Jesús [40%] |
| 151 | Crear las lecciones | 2d | 2016-12-02 | 2016-12-06 | 150 |  | Antonio [40%]; Dani [40%]; Sergio; Jesús [40%] |
| 152 | Crear las unidades | 2d | 2016-12-06 | 2016-12-08 | 151 |  | Antonio [40%]; Dani [40%]; Sergio; Jesús [40%] |
| 153 | Preparar presentación de los MOOClearning | 10h | 2016-12-08 | 2016-12-09 | 149 |  | Antonio [40%]; Dani [40%]; Sergio; Jesús [40%] |
| 154 | Conversor PDF-MP3 | 7d | 2016-12-01 | 2016-12-09 |  | start no earlier than 2016-12-01 | Dani [20%] |
| 155 | Revisar y completar tareas restantes el hito | 1.5d | 2016-12-12 | 2016-12-14 | 148 |  | Antonio [80%]; George [80%]; Jesús [80%] |
| 156 | **Comenzar con video promocional** | 9d | 2016-11-30 | 2016-12-13 |  |  |  |
| 157 | Establecer idea inicial | 1d | 2016-11-30 | 2016-12-01 |  |  | Ruben [80%]; Dani [40%] |
| 158 | Hacer composición de tomas y escenas | 4d | 2016-12-01 | 2016-12-07 | 157 |  | Ruben [80%]; Dani [40%] |
| 159 | Probar diferentes transiciones entre escenas | 2d | 2016-12-07 | 2016-12-09 | 158 |  | Ruben [80%]; Dani [40%] |
| 160 | Pensar cambios y mejoras | 2d | 2016-12-09 | 2016-12-13 | 159 |  | Ruben [80%]; Dani [40%] |
| 165 | **Agenda del proyecto** | 1.12d | 2016-12-14 | 2016-12-15 |  |  |  |
| 166 | Relación de actividades(WBS) | 4h | 2016-12-14 | 2016-12-14 |  |  |  |
| 167 | Plan general del proyecto(Hitos) | 5h | 2016-12-14 | 2016-12-15 | 166 |  |  |
| 169 | Terminar el documento de planificación | 3h | 2016-12-16 | 2016-12-16 | 168 |  |  |
| 170 | Confeccionar el informe completo de iteraciones del Hito 1 | 6h | 2016-12-16 | 2016-12-19 | 169 |  | Antonio [40%]; George [40%]; Jesús [80%] |
| 171 | Crear el informe final de seguimiento | 5h | 2016-12-16 | 2016-12-19 | 169 |  | Antonio [40%]; George [40%] |
| 172 | **Curso MOOClearning(4º)** | 1.88d | 2016-12-14 | 2016-12-16 |  |  |  |
| 173 | Crear la base del curso | 5h | 2016-12-14 | 2016-12-15 |  |  | Antonio [80%]; Dani [50%]; Jesús [80%]; Sergio |
| 174 | Crear las lecciones | 5h | 2016-12-15 | 2016-12-15 | 173 |  | Antonio [80%]; Dani [50%]; Jesús [80%]; Sergio |
| 175 | Crear las unidades | 5h | 2016-12-15 | 2016-12-16 | 174 |  | Antonio [80%]; Dani [50%]; Jesús [80%]; Sergio |
| 176 | Revisar y preparar todos los entregables para la entrega | 3.5d | 2016-12-19 | 2016-12-23 | 170, 171 |  | Antonio [80%]; George [80%]; Jesús [80%] |
| 177 | **Video promocional** | 6d | 2016-12-14 | 2016-12-22 |  |  |  |
| 178 | Probar mejoras | 2d | 2016-12-14 | 2016-12-16 |  |  | Ruben [80%]; Dani [50%] |
| 179 | Añadir efectos | 2d | 2016-12-16 | 2016-12-20 | 178 |  | Ruben [80%]; Dani |
| 180 | Añadir capa de ajuste | 2d | 2016-12-20 | 2016-12-22 | 179 |  | Ruben [80%]; Dani |
| 184 | *Entregables: informe de seguimiento[SMBI],informe de iteraciones[PM] , documento planificación [PM], diagrama de flujo de interfaces[SMA], logo[PD],cartel[PD],animacion logo[PD],cursos MOOClearning[elearn] | 0d | 2016-12-23 | 2016-12-23 | 164 |  |  |

Changed:

| ID | Task | Start | Finish | Duration | Complete | Total float |
| --- | --- | --- | --- | --- | --- | --- |
| 2 | **HITO 0** | 2016-09-12 09:00 → 2016-09-12 | 2016-10-19 12:00 → 2016-10-19 |  |  |  |
| 3 | **Iteración 1** | 2016-09-12 09:00 → 2016-09-12 | 2016-09-21 10:00 → 2016-09-21 |  |  |  |
| 4 | Definir el público objetivo | 2016-09-12 09:00 → 2016-09-12 | 2016-09-12 17:00 → 2016-09-12 |  |  |  |
| 5 | Definir los problemas y soluciones de esos usuarios | 2016-09-12 17:00 → 2016-09-12 | 2016-09-13 13:00 → 2016-09-13 |  |  |  |
| 6 | Deninir métricas | 2016-09-13 15:00 → 2016-09-13 | 2016-09-14 10:00 → 2016-09-14 |  |  |  |
| 7 | Especificar los costes y los ingresos | 2016-09-14 10:00 → 2016-09-14 | 2016-09-15 10:00 → 2016-09-15 |  |  |  |
| 8 | Definir los canales | 2016-09-14 10:00 → 2016-09-14 | 2016-09-14 16:00 → 2016-09-14 |  |  |  |
| 9 | Rellenar documento de Concepto del proyecto | 2016-09-15 10:00 → 2016-09-15 | 2016-09-21 10:00 → 2016-09-21 |  |  |  |
| 10 | * Entregables Iteración 1: LEAN Canvas y especificación del mismo | 2016-09-12 09:00 → 2016-09-12 | 2016-09-12 09:00 → 2016-09-12 |  |  |  |
| 11 | **Iteración 2** | 2016-09-21 10:00 → 2016-09-21 | 2016-10-05 10:00 → 2016-10-05 |  |  |  |
| 12 | Definir los tipos de usuarios | 2016-09-21 10:00 → 2016-09-21 | 2016-09-21 16:00 → 2016-09-21 |  |  |  |
| 13 | Definir las interfaces externas | 2016-09-21 16:00 → 2016-09-21 | 2016-09-22 10:00 → 2016-09-22 |  |  |  |
| 14 | **Definir los requisitos funcionales** | 2016-09-22 10:00 → 2016-09-22 | 2016-09-26 17:00 → 2016-09-26 |  |  |  |
| 15 | De usuario invitado | 2016-09-22 10:00 → 2016-09-22 | 2016-09-22 12:00 → 2016-09-22 |  |  |  |
| 16 | De usuario registrado free | 2016-09-22 12:00 → 2016-09-22 | 2016-09-23 10:00 → 2016-09-23 |  |  |  |
| 17 | De usuario registrado premium | 2016-09-23 10:00 → 2016-09-23 | 2016-09-23 18:00 → 2016-09-23 |  |  |  |
| 18 | Del usuario profesor | 2016-09-23 18:00 → 2016-09-23 | 2016-09-26 12:00 → 2016-09-26 |  |  |  |
| 19 | Del usuario tipo Alumno | 2016-09-26 12:00 → 2016-09-26 | 2016-09-26 17:00 → 2016-09-26 |  |  |  |
| 20 | Del Administrador | 2016-09-23 18:00 → 2016-09-23 | 2016-09-26 11:00 → 2016-09-26 |  |  |  |
| 21 | Elaborar el Presupuesto (hoja de cálculo) | 2016-09-26 17:00 → 2016-09-26 | 2016-09-27 12:00 → 2016-09-27 |  |  |  |
| 22 | **Requisitos no Funcionales** | 2016-09-27 12:00 → 2016-09-27 | 2016-09-30 18:00 → 2016-09-30 |  |  |  |
| 23 | Integridad | 2016-09-27 12:00 → 2016-09-27 | 2016-09-28 12:00 → 2016-09-28 |  |  |  |
| 24 | Fiabilidad | 2016-09-28 12:00 → 2016-09-28 | 2016-09-28 19:00 → 2016-09-28 |  |  |  |
| 25 | Mantenimiento | 2016-09-29 09:00 → 2016-09-29 | 2016-09-29 13:00 → 2016-09-29 |  |  |  |
| 26 | Privacidad | 2016-09-29 15:00 → 2016-09-29 | 2016-09-30 10:00 → 2016-09-30 |  |  |  |
| 27 | Usabilidad y Accesibilidad | 2016-09-30 10:00 → 2016-09-30 | 2016-09-30 13:00 → 2016-09-30 |  |  |  |
| 28 | Autentificación | 2016-09-30 15:00 → 2016-09-30 | 2016-09-30 18:00 → 2016-09-30 |  |  |  |
| 29 | Definir funcionalidades del sistema(casos de uso) | 2016-09-30 18:00 → 2016-09-30 | 2016-10-03 12:00 → 2016-10-03 |  |  |  |
| 30 | Sketch de la infografía | 2016-10-03 12:00 → 2016-10-03 | 2016-10-04 12:00 → 2016-10-04 |  |  |  |
| 31 | Métricas a utilizar y software del proyecto | 2016-10-04 12:00 → 2016-10-04 | 2016-10-05 10:00 → 2016-10-05 |  |  |  |
| 32 | Especificar API's a utilizar | 2016-09-26 17:00 → 2016-09-26 | 2016-09-27 10:00 → 2016-09-27 |  |  |  |
| 33 | Medios de difusión de la plataforma | 2016-09-27 10:00 → 2016-09-27 | 2016-09-27 13:00 → 2016-09-27 |  |  |  |
| 34 | Especificar el tipo de contenido de la web | 2016-09-27 15:00 → 2016-09-27 | 2016-09-27 19:00 → 2016-09-27 |  |  |  |
| 35 | Definir los derechos de copyright | 2016-09-28 09:00 → 2016-09-28 | 2016-09-28 12:00 → 2016-09-28 |  |  |  |
| 36 | * Entregables Iteración 2: Documento de Especificación del proyecto + Hoja de cálculo de presupuesto | 2016-09-21 10:00 → 2016-09-21 | 2016-09-21 10:00 → 2016-09-21 |  |  |  |
| 37 | **Iteración 3** | 2016-10-05 10:00 → 2016-10-05 | 2016-10-19 12:00 → 2016-10-19 |  |  |  |
| 38 | Observaciones GitHub | 2016-10-05 10:00 → 2016-10-05 | 2016-10-06 10:00 → 2016-10-06 |  |  |  |
| 39 | Introducir tareas en el Project | 2016-10-06 10:00 → 2016-10-06 | 2016-10-06 18:00 → 2016-10-06 |  |  |  |
| 40 | Arreglar hoja de presupuestos | 2016-10-06 18:00 → 2016-10-06 | 2016-10-07 16:00 → 2016-10-07 |  |  |  |
| 41 | **Mockups del sistema** | 2016-10-07 16:00 → 2016-10-07 | 2016-10-13 12:00 → 2016-10-13 |  |  |  |
| 42 | Del usuario no registrado | 2016-10-07 16:00 → 2016-10-07 | 2016-10-10 11:00 → 2016-10-10 |  |  |  |
| 43 | Del usuario registrado Free | 2016-10-10 11:00 → 2016-10-10 | 2016-10-11 16:00 → 2016-10-11 |  |  |  |
| 44 | Del profesor | 2016-10-10 11:00 → 2016-10-10 | 2016-10-11 16:00 → 2016-10-11 |  |  |  |
| 45 | Del usuario Registrado premium | 2016-10-11 16:00 → 2016-10-11 | 2016-10-12 13:00 → 2016-10-12 |  |  |  |
| 46 | Del alumno | 2016-10-12 15:00 → 2016-10-12 | 2016-10-13 12:00 → 2016-10-13 |  |  |  |
| 47 | Rectificar todos los fallos del documentos especificados por el profesor | 2016-10-06 18:00 → 2016-10-06 | 2016-10-07 18:00 → 2016-10-07 |  |  |  |
| 48 | Crear diagrama de clases | 2016-10-13 12:00 → 2016-10-13 | 2016-10-14 17:00 → 2016-10-14 |  |  |  |
| 49 | Arquitectura del Sistema | 2016-10-14 17:00 → 2016-10-14 | 2016-10-17 17:00 → 2016-10-17 |  |  |  |
| 50 | Especificación de elementos y tecnologías de seguridad y autenticación | 2016-10-17 17:00 → 2016-10-17 | 2016-10-18 19:00 → 2016-10-18 |  |  |  |
| 51 | Especificación API Rest y del modelo de datos | 2016-10-13 12:00 → 2016-10-13 | 2016-10-13 17:00 → 2016-10-13 |  |  |  |
| 52 | Instalar Apache | 2016-10-19 09:00 → 2016-10-19 | 2016-10-19 12:00 → 2016-10-19 |  |  |  |
| 53 | Instalar MySQL | 2016-10-13 17:00 → 2016-10-13 | 2016-10-13 18:00 → 2016-10-13 |  |  |  |
| 54 | *Entregables Iteración 3: Documento final de Especificación y Requisitos, Presupuesto y documento con las tareas Project | 2016-10-05 10:00 → 2016-10-05 | 2016-10-05 10:00 → 2016-10-05 |  |  |  |
| 55 | **HITO 1** | 2016-10-19 12:00 → 2016-10-19 A | 2016-12-26 18:12 → 2016-12-23 (-3d) | 48.52d? → 47.02d | 0% → 24% |  |
| 56 | **Iteración 1** | 2016-10-19 12:00 → 2016-10-19 A | 2016-11-02 12:12 → 2016-11-02 |  | 0% → 50% |  |
| 57 | Corregir comentarios Villagra y Berna | 2016-10-19 12:00 → 2016-10-19 A | 2016-10-19 19:00 → 2016-10-19 A |  | 0% → 100% | 0d → none |
| 58 | **Detallar plan de iteraciones del mes de noviembre** | 2016-10-20 09:00 → 2016-10-20 A | 2016-10-21 13:00 → 2016-10-21 A |  | 0% → 100% | 0.03d → none |
| 59 | Crear Subtareas Project | 2016-10-20 09:00 → 2016-10-20 A | 2016-10-20 13:00 → 2016-10-20 A |  | 0% → 100% | 0.03d → none |
| 60 | Definir procedencias Project | 2016-10-20 15:00 → 2016-10-20 A | 2016-10-20 19:00 → 2016-10-20 A |  | 0% → 100% | 0.03d → none |
| 61 | Crear los recursos en Project | 2016-10-21 09:00 → 2016-10-21 A | 2016-10-21 13:00 → 2016-10-21 A |  | 0% → 100% | 0.03d → none |
| 62 | Realizar MOOC LeanCanvas | 2016-10-21 15:00 → 2016-10-21 A | 2016-10-25 13:00 → 2016-10-25 A |  | 0% → 100% | 0.03d → none |
| 63 | **Configuración e instalación de los elementos de Backend y Seguridad** | 2016-10-25 15:00 → 2016-10-25 A | 2016-10-27 19:00 → 2016-10-27 A |  | 0% → 100% | 0.03d → none |
| 64 | Instalación MySQL | 2016-10-25 15:00 → 2016-10-25 A | 2016-10-25 19:00 → 2016-10-25 A |  | 0% → 100% | 0.03d → none |
| 65 | Configuración Apache | 2016-10-26 09:00 → 2016-10-26 A | 2016-10-26 19:00 → 2016-10-26 A |  | 0% → 100% | 0.03d → none |
| 66 | Crear todas las tablas en la BD | 2016-10-27 09:00 → 2016-10-27 A | 2016-10-27 19:00 → 2016-10-27 A |  | 0% → 100% | 0.03d → none |
| 67 | **Identificar los riesgos** | 2016-10-28 09:00 → 2016-10-28 A | 2016-11-02 12:00 → 2016-11-02 A |  | 0% → 100% | 0.03d → none |
| 68 | De Tecnología | 2016-10-28 09:00 → 2016-10-28 A | 2016-10-28 17:00 → 2016-10-28 A |  | 0% → 100% | 0.03d → none |
| 69 | De Personas | 2016-10-28 17:00 → 2016-10-28 A | 2016-10-31 11:00 → 2016-10-31 A |  | 0% → 100% | 0.03d → none |
| 70 | Organizacional | 2016-10-31 11:00 → 2016-10-31 A | 2016-10-31 17:00 → 2016-10-31 A |  | 0% → 100% | 0.03d → none |
| 71 | Herramientas | 2016-10-31 17:00 → 2016-10-31 A | 2016-11-01 11:00 → 2016-11-01 A |  | 0% → 100% | 0.03d → none |

| ID | Task | Start | Finish | Duration | Complete | Total float | Predecessors | Other |
| --- | --- | --- | --- | --- | --- | --- | --- | --- |
| 72 | De Requerimientos | 2016-11-01 11:00 → 2016-11-01 A | 2016-11-01 17:00 → 2016-11-01 A |  | 0% → 100% | 0.03d → none |  |  |
| 73 | De Estimación | 2016-11-01 17:00 → 2016-11-01 A | 2016-11-02 12:00 → 2016-11-02 A |  | 0% → 100% | 0.03d → none |  |  |
| 74 | **Empezar con la animación del logo** | 2016-10-20 09:00 → 2016-10-20 A | 2016-11-02 12:12 → 2016-11-02 A |  | 0% → 100% | 0d → none |  |  |
| 75 | Hacer bocetos del logo | 2016-10-20 09:00 → 2016-10-20 A | 2016-10-25 13:00 → 2016-10-25 A |  | 0% → 100% | 0d → none |  |  |
| 76 | Buscar ejemplos de intros | 2016-10-25 15:00 → 2016-10-25 A | 2016-10-31 13:00 → 2016-10-31 A |  | 0% → 100% | 0d → none |  |  |
| 77 | Buscar tutoriales de affter efects | 2016-10-31 15:00 → 2016-10-31 A | 2016-11-02 12:12 → 2016-11-02 A |  | 0% → 100% | 0d → none |  |  |
| 78 | Registrar tiempos y % de realización de tareas | 2016-10-19 12:00 → 2016-10-19 | 2016-11-01 18:00 → 2016-11-01 |  |  |  |  |  |
| 79 | Comparar la planificación prevista con la real de la iteración 1 | 2016-10-19 12:00 → 2016-10-19 | 2016-11-01 18:00 → 2016-11-01 |  |  |  |  |  |
| 80 | Confeccionar informe de la iteración 1 | 2016-11-01 18:00 → 2016-11-01 | 2016-11-02 12:00 → 2016-11-02 |  |  |  |  |  |
| 81 | **Iteración 2** | 2016-11-02 12:12 → 2016-11-02 A | 2016-11-16 12:12 → 2016-11-16 |  | 0% → 67% |  |  |  |
| 82 | Corregir y rectificar fallos de la iteración anterior | 2016-11-02 12:12 → 2016-11-02 A | 2016-11-03 12:12 → 2016-11-03 A |  | 0% → 100% | 0.38d → none |  |  |
| 83 | **Análisis de Riesgos** | 2016-11-03 12:12 → 2016-11-03 A | 2016-11-07 10:12 → 2016-11-07 A |  | 0% → 100% | 0.38d → none |  |  |
| 84 | Prioridades de los riesgos | 2016-11-03 12:12 → 2016-11-03 A | 2016-11-04 10:12 → 2016-11-04 A |  | 0% → 100% | 0.38d → none |  |  |
| 85 | Planes de contingencias | 2016-11-04 10:12 → 2016-11-04 A | 2016-11-07 10:12 → 2016-11-07 A |  | 0% → 100% | 0.38d → none |  |  |
| 86 | Instalar los elementos de backend y seguridad | 2016-11-07 10:12 → 2016-11-07 A | 2016-11-10 10:12 → 2016-11-10 |  | 0% → 75% | 0.38d → 0.12d |  |  |
| 87 | Boceto del diagrama de Flujo de Interfaces | 2016-11-10 10:12 → 2016-11-10 A | 2016-11-10 16:12 → 2016-11-10 |  | 0% → 25% | 0.38d → 3.75d |  |  |
| 88 | **Trabajar en el posicionamiento web** | 2016-11-10 16:12 → 2016-11-10 A | 2016-11-16 09:12 → 2016-11-16 A |  | 0% → 100% | 0.38d → none |  |  |
| 89 | Búsqueda de las palabras clave | 2016-11-10 16:12 → 2016-11-10 A | 2016-11-11 10:12 → 2016-11-11 A |  | 0% → 100% | 0.38d → none |  |  |
| 90 | Definir sinónimos y términos relacionados a esas palabras clave | 2016-11-11 10:12 → 2016-11-11 A | 2016-11-11 16:12 → 2016-11-11 A |  | 0% → 100% | 0.38d → none |  |  |
| 91 | Definir técnicas para que la araña de Google visite nuestra wen | 2016-11-11 16:12 → 2016-11-11 A | 2016-11-14 11:12 → 2016-11-14 A |  | 0% → 100% | 0.38d → none |  |  |
| 92 | Definir técnicas para aumentar la relevancia | 2016-11-14 11:12 → 2016-11-14 A | 2016-11-15 09:12 → 2016-11-15 A |  | 0% → 100% | 0.38d → none |  |  |
| 93 | **Aumentar la autoridad web** | 2016-11-15 09:12 → 2016-11-15 A | 2016-11-16 09:12 → 2016-11-16 A |  | 0% → 100% | 0.38d → none |  |  |
| 94 | Mediante Linkbuilding | 2016-11-15 09:12 → 2016-11-15 A | 2016-11-15 15:12 → 2016-11-15 A |  | 0% → 100% | 0.38d → none |  |  |
| 95 | Mediante Linkbaiting | 2016-11-15 15:12 → 2016-11-15 A | 2016-11-16 09:12 → 2016-11-16 A |  | 0% → 100% | 0.38d → none |  |  |
| 96 | **Hacer bocetos de la animación del logo** | 2016-11-02 12:12 → 2016-11-02 A | 2016-11-15 12:12 → 2016-11-15 |  | 0% → 78% |  |  |  |
| 97 | Elegir Logo | 2016-11-02 12:12 → 2016-11-02 A | 2016-11-03 12:12 → 2016-11-03 A |  | 0% → 100% | 1d → none |  |  |
| 98 | Hacer composición básica | 2016-11-03 12:12 → 2016-11-03 A | 2016-11-09 12:12 → 2016-11-09 A |  | 0% → 100% | 1d → none |  |  |
| 99 | Probar diferentes efectos | 2016-11-09 12:12 → 2016-11-09 A | 2016-11-11 12:12 → 2016-11-11 A |  | 0% → 100% | 1d → none |  |  |
| 100 | Pensar cambios y mejoras | 2016-11-11 12:12 → 2016-11-11 | 2016-11-15 12:12 → 2016-11-15 |  |  |  |  |  |
| 101 | Registrar tiempos y % de realización de tareas | 2016-11-02 12:12 → 2016-11-02 A | 2016-11-15 18:12 → 2016-11-15 A |  | 0% → 100% | 0d → none |  |  |
| 102 | Comparar la planificación prevista con la real de la iteración 2 | 2016-11-02 12:12 → 2016-11-02 | 2016-11-15 18:12 → 2016-11-15 |  |  | 0d → 0.5d |  |  |
| 103 | Confeccionar informe de la iteración 2 | 2016-11-15 18:12 → 2016-11-15 A | 2016-11-16 12:12 → 2016-11-16 A |  | 0% → 100% | 0d → none |  |  |
| 104 | **Iteración 3** | 2016-11-16 12:12 → 2016-11-16 A | 2016-11-29 18:12 → 2016-11-30 (+1d) | 9.5d? → 10d | 0% → 6% |  |  |  |
| 109 | Revisar el diagrama del flujo de interfaces | 2016-11-16 12:12 → 2016-11-18 (+2d) | 2016-11-17 12:12 → 2016-11-21 (+4d) | 1d? → 4h |  | 8.5d → 0.78d | none → 108 |  |
| 110 | **API RESTful** | 2016-11-16 12:12 → 2016-11-21 (+5d) | 2016-11-17 18:12 → 2016-11-23 (+6d) | 1.5d → 2d |  | 8d → 0.78d | none → 109 |  |
| 111 | Instalar Oauth 2.0 | 2016-11-16 12:12 → 2016-11-21 (+5d) | 2016-11-16 16:12 → 2016-11-21 (+5d) | 2h → 4h |  | 8d → 0.78d |  | resources none → George [80%]; Antonio [40%] |
| 112 | Hacer pruebas de seguridad | 2016-11-16 16:12 → 2016-11-21 (+5d) | 2016-11-17 11:12 → 2016-11-22 (+5d) | 5h → 6h |  | 8d → 0.78d |  | resources none → George [80%]; Antonio [40%] |
| 113 | Hacer pruebas de carga | 2016-11-17 11:12 → 2016-11-22 (+5d) | 2016-11-17 18:12 → 2016-11-23 (+6d) | 5h → 6h |  | 8d → 0.78d |  | resources none → George [80%]; Antonio [40%] |
| 133 | Registrar tiempos y % de realización de tareas | 2016-11-16 12:12 → 2016-11-16 | 2016-11-29 18:12 → 2016-11-29 |  |  |  |  |  |
| 134 | Comparar la planificación prevista con la real de la iteración 1 | 2016-11-16 12:12 → 2016-11-16 | 2016-11-29 18:12 → 2016-11-29 |  |  |  |  |  |
| 135 | Confeccionar informe de la iteración 1 | 2016-11-16 12:12 → 2016-11-29 (+13d) | 2016-11-16 18:12 → 2016-11-30 (+14d) |  |  | 9d → 0d | none → 134, 133 |  |
| 136 | **Iteración 4** | 2016-11-29 18:12 → 2016-11-30 (+1d) | 2016-12-13 12:12 → 2016-12-14 (+1d) | 9.5d → 10d |  |  |  |  |
| 161 | Registrar tiempos y % de realización de tareas | 2016-11-29 18:12 → 2016-11-30 (+1d) | 2016-12-13 12:12 → 2016-12-13 |  |  |  |  |  |
| 162 | Comparar la planificación prevista con la real de la iteración 1 | 2016-11-29 18:12 → 2016-11-30 (+1d) | 2016-12-13 12:12 → 2016-12-13 |  |  |  |  |  |
| 163 | Confeccionar informe de la iteración 1 | 2016-11-29 18:12 → 2016-12-13 (+14d) | 2016-11-30 12:12 → 2016-12-14 (+14d) |  |  | 9d → 0d | none → 162, 161 |  |
| 164 | **Iteración 5** | 2016-12-13 12:12 → 2016-12-14 (+1d) | 2016-12-26 18:12 → 2016-12-23 (-3d) | 9.5d → 7d |  |  |  |  |
| 168 | Aplicar el modelo EVA en el proyecto | 2016-11-16 12:12 → 2016-12-15 (+29d) | 2016-11-17 12:12 → 2016-12-16 (+29d) |  |  | 8.5d → 0.25d | none → 165 |  |
| 181 | Registrar tiempos y % de realización de tareas | 2016-12-13 12:12 → 2016-12-14 (+1d) | 2016-12-26 18:12 → 2016-12-22 (-4d) | 9.5d → 6.5d |  |  |  |  |
| 182 | Comparar la planificación prevista con la real de la iteración 1 | 2016-12-13 12:12 → 2016-12-14 (+1d) | 2016-12-26 18:12 → 2016-12-22 (-4d) | 9.5d → 6.5d |  |  |  |  |
| 183 | Confeccionar informe de la iteración 1 | 2016-12-13 12:12 → 2016-12-22 (+9d) | 2016-12-13 18:12 → 2016-12-23 (+10d) |  |  | 9d → 0d | none → 181, 182 |  |
| 186 | **Colores de las asignaturas** | 2016-09-12 09:00 → 2016-09-12 | 2016-09-12 09:00 → 2016-09-12 |  |  |  |  |  |
| 187 | Proyecto Multimedia | 2016-09-12 09:00 → 2016-09-12 | 2016-09-12 09:00 → 2016-09-12 |  |  | 75.9d → 74.4d |  |  |
| 188 | Sistemas de Difusion Multimedia | 2016-09-12 09:00 → 2016-09-12 | 2016-09-12 09:00 → 2016-09-12 |  |  | 75.9d → 74.4d |  |  |
| 189 | Sistemas Multimedia Basados en Internet | 2016-09-12 09:00 → 2016-09-12 | 2016-09-12 09:00 → 2016-09-12 |  |  | 75.9d → 74.4d |  |  |
| 190 | E- Learning | 2016-09-12 09:00 → 2016-09-12 | 2016-09-12 09:00 → 2016-09-12 |  |  | 75.9d → 74.4d |  |  |
| 191 | Sistemas Multimedia Avanzados | 2016-09-12 09:00 → 2016-09-12 | 2016-09-12 09:00 → 2016-09-12 |  |  | 75.9d → 74.4d |  |  |
| 192 | Postproducción Digital | 2016-09-12 09:00 → 2016-09-12 | 2016-09-12 09:00 → 2016-09-12 |  |  | 75.9d → 74.4d |  |  |
| 193 | Negocios Multimedia | 2016-09-12 09:00 → 2016-09-12 | 2016-09-12 09:00 → 2016-09-12 |  |  | 75.9d → 74.4d |  |  |

## Version 4 (saved 2016-11-26)

Note of the change: Duraciones de las iteraciones 1 y 2 del Hito 1 puestas.

Last finish stays 2016-12-23. Complete tasks 36 → 41.

Changed:

| ID | Task | Finish | Complete | Total float | Other |
| --- | --- | --- | --- | --- | --- |
| 2 | **HITO 0** |  |  |  | baseline start none → 2016-09-12; baseline finish none → 2016-10-19 |
| 3 | **Iteración 1** |  |  |  | baseline start none → 2016-09-12; baseline finish none → 2016-09-21 |
| 4 | Definir el público objetivo |  |  |  | baseline start none → 2016-09-12; baseline finish none → 2016-09-12 |
| 5 | Definir los problemas y soluciones de esos usuarios |  |  |  | baseline start none → 2016-09-12; baseline finish none → 2016-09-13 |
| 6 | Deninir métricas |  |  |  | baseline start none → 2016-09-13; baseline finish none → 2016-09-14 |
| 7 | Especificar los costes y los ingresos |  |  |  | baseline start none → 2016-09-14; baseline finish none → 2016-09-15 |
| 8 | Definir los canales |  |  |  | baseline start none → 2016-09-14; baseline finish none → 2016-09-14 |
| 9 | Rellenar documento de Concepto del proyecto |  |  |  | baseline start none → 2016-09-15; baseline finish none → 2016-09-21 |
| 10 | * Entregables Iteración 1: LEAN Canvas y especificación del mismo |  |  |  | baseline start none → 2016-09-12; baseline finish none → 2016-09-12 |
| 11 | **Iteración 2** |  |  |  | baseline start none → 2016-09-21; baseline finish none → 2016-10-05 |
| 12 | Definir los tipos de usuarios |  |  |  | baseline start none → 2016-09-21; baseline finish none → 2016-09-21 |
| 13 | Definir las interfaces externas |  |  |  | baseline start none → 2016-09-21; baseline finish none → 2016-09-22 |
| 14 | **Definir los requisitos funcionales** |  |  |  | baseline start none → 2016-09-22; baseline finish none → 2016-09-26 |
| 15 | De usuario invitado |  |  |  | baseline start none → 2016-09-22; baseline finish none → 2016-09-22 |
| 16 | De usuario registrado free |  |  |  | baseline start none → 2016-09-22; baseline finish none → 2016-09-23 |
| 17 | De usuario registrado premium |  |  |  | baseline start none → 2016-09-23; baseline finish none → 2016-09-23 |
| 18 | Del usuario profesor |  |  |  | baseline start none → 2016-09-23; baseline finish none → 2016-09-26 |
| 19 | Del usuario tipo Alumno |  |  |  | baseline start none → 2016-09-26; baseline finish none → 2016-09-26 |
| 20 | Del Administrador |  |  |  | baseline start none → 2016-09-23; baseline finish none → 2016-09-26 |
| 21 | Elaborar el Presupuesto (hoja de cálculo) |  |  |  | resources George; Ruben → George [60%]; Ruben; baseline start none → 2016-09-26; baseline finish none → 2016-09-27 |
| 22 | **Requisitos no Funcionales** |  |  |  | baseline start none → 2016-09-27; baseline finish none → 2016-09-30 |
| 23 | Integridad |  |  |  | baseline start none → 2016-09-27; baseline finish none → 2016-09-28 |
| 24 | Fiabilidad |  |  |  | baseline start none → 2016-09-28; baseline finish none → 2016-09-28 |
| 25 | Mantenimiento |  |  |  | baseline start none → 2016-09-29; baseline finish none → 2016-09-29 |
| 26 | Privacidad |  |  |  | baseline start none → 2016-09-29; baseline finish none → 2016-09-30 |
| 27 | Usabilidad y Accesibilidad |  |  |  | baseline start none → 2016-09-30; baseline finish none → 2016-09-30 |
| 28 | Autentificación |  |  |  | baseline start none → 2016-09-30; baseline finish none → 2016-09-30 |
| 29 | Definir funcionalidades del sistema(casos de uso) |  |  |  | baseline start none → 2016-09-30; baseline finish none → 2016-10-03 |
| 30 | Sketch de la infografía |  |  |  | baseline start none → 2016-10-03; baseline finish none → 2016-10-04 |
| 31 | Métricas a utilizar y software del proyecto |  |  |  | baseline start none → 2016-10-04; baseline finish none → 2016-10-05 |
| 32 | Especificar API's a utilizar |  |  |  | baseline start none → 2016-09-26; baseline finish none → 2016-09-27 |
| 33 | Medios de difusión de la plataforma |  |  |  | resources George → George [30%]; baseline start none → 2016-09-27; baseline finish none → 2016-09-27 |
| 34 | Especificar el tipo de contenido de la web |  |  |  | baseline start none → 2016-09-27; baseline finish none → 2016-09-27 |
| 35 | Definir los derechos de copyright |  |  |  | baseline start none → 2016-09-28; baseline finish none → 2016-09-28 |
| 36 | * Entregables Iteración 2: Documento de Especificación del proyecto + Hoja de cálculo de presupuesto |  |  |  | baseline start none → 2016-09-21; baseline finish none → 2016-09-21 |
| 37 | **Iteración 3** |  |  |  | baseline start none → 2016-10-05; baseline finish none → 2016-10-19 |
| 38 | Observaciones GitHub |  |  |  | baseline start none → 2016-10-05; baseline finish none → 2016-10-06 |
| 39 | Introducir tareas en el Project |  |  |  | baseline start none → 2016-10-06; baseline finish none → 2016-10-06 |
| 40 | Arreglar hoja de presupuestos |  |  |  | baseline start none → 2016-10-06; baseline finish none → 2016-10-07 |
| 41 | **Mockups del sistema** |  |  |  | baseline start none → 2016-10-07; baseline finish none → 2016-10-13 |
| 42 | Del usuario no registrado |  |  |  | baseline start none → 2016-10-07; baseline finish none → 2016-10-10 |
| 43 | Del usuario registrado Free |  |  |  | baseline start none → 2016-10-10; baseline finish none → 2016-10-11 |
| 44 | Del profesor |  |  |  | baseline start none → 2016-10-10; baseline finish none → 2016-10-11 |
| 45 | Del usuario Registrado premium |  |  |  | baseline start none → 2016-10-11; baseline finish none → 2016-10-12 |
| 46 | Del alumno |  |  |  | baseline start none → 2016-10-12; baseline finish none → 2016-10-13 |
| 47 | Rectificar todos los fallos del documentos especificados por el profesor |  |  |  | baseline start none → 2016-10-06; baseline finish none → 2016-10-07 |
| 48 | Crear diagrama de clases |  |  |  | baseline start none → 2016-10-13; baseline finish none → 2016-10-14 |
| 49 | Arquitectura del Sistema |  |  |  | baseline start none → 2016-10-14; baseline finish none → 2016-10-17 |
| 50 | Especificación de elementos y tecnologías de seguridad y autenticación |  |  |  | baseline start none → 2016-10-17; baseline finish none → 2016-10-18 |
| 51 | Especificación API Rest y del modelo de datos |  |  |  | baseline start none → 2016-10-13; baseline finish none → 2016-10-13 |
| 52 | Instalar Apache |  |  |  | baseline start none → 2016-10-19; baseline finish none → 2016-10-19 |
| 53 | Instalar MySQL |  |  |  | baseline start none → 2016-10-13; baseline finish none → 2016-10-13 |
| 54 | *Entregables Iteración 3: Documento final de Especificación y Requisitos, Presupuesto y documento con las tareas Project |  |  |  | baseline start none → 2016-10-05; baseline finish none → 2016-10-05 |
| 55 | **HITO 1** |  | 24% → 39% |  | baseline start none → 2016-10-19; baseline finish none → 2016-12-23 |
| 56 | **Iteración 1** | 2016-11-02 A | 50% → 100% | 0d → none | baseline start none → 2016-10-19; baseline finish none → 2016-11-02 |
| 57 | Corregir comentarios Villagra y Berna |  |  |  | baseline start none → 2016-10-19; baseline finish none → 2016-10-19 |
| 58 | **Detallar plan de iteraciones del mes de noviembre** |  |  |  | baseline start none → 2016-10-20; baseline finish none → 2016-10-21 |
| 59 | Crear Subtareas Project |  |  |  | baseline start none → 2016-10-20; baseline finish none → 2016-10-20 |
| 60 | Definir procedencias Project |  |  |  | baseline start none → 2016-10-20; baseline finish none → 2016-10-20 |
| 61 | Crear los recursos en Project |  |  |  | baseline start none → 2016-10-21; baseline finish none → 2016-10-21 |
| 62 | Realizar MOOC LeanCanvas |  |  |  | baseline start none → 2016-10-21; baseline finish none → 2016-10-25 |
| 63 | **Configuración e instalación de los elementos de Backend y Seguridad** |  |  |  | baseline start none → 2016-10-25; baseline finish none → 2016-10-27 |
| 64 | Instalación MySQL |  |  |  | baseline start none → 2016-10-25; baseline finish none → 2016-10-25 |
| 65 | Configuración Apache |  |  |  | baseline start none → 2016-10-26; baseline finish none → 2016-10-26 |
| 66 | Crear todas las tablas en la BD |  |  |  | baseline start none → 2016-10-27; baseline finish none → 2016-10-27 |
| 67 | **Identificar los riesgos** |  |  |  | baseline start none → 2016-10-28; baseline finish none → 2016-11-02 |
| 68 | De Tecnología |  |  |  | baseline start none → 2016-10-28; baseline finish none → 2016-10-28 |
| 69 | De Personas |  |  |  | baseline start none → 2016-10-28; baseline finish none → 2016-10-31 |
| 70 | Organizacional |  |  |  | baseline start none → 2016-10-31; baseline finish none → 2016-10-31 |
| 71 | Herramientas |  |  |  | baseline start none → 2016-10-31; baseline finish none → 2016-11-01 |

| ID | Task | Start | Finish | Complete | Total float | Other |
| --- | --- | --- | --- | --- | --- | --- |
| 72 | De Requerimientos |  |  |  |  | baseline start none → 2016-11-01; baseline finish none → 2016-11-01 |
| 73 | De Estimación |  |  |  |  | baseline start none → 2016-11-01; baseline finish none → 2016-11-02 |
| 74 | **Empezar con la animación del logo** |  |  |  |  | baseline start none → 2016-10-20; baseline finish none → 2016-11-02 |
| 75 | Hacer bocetos del logo |  |  |  |  | baseline start none → 2016-10-20; baseline finish none → 2016-10-25 |
| 76 | Buscar ejemplos de intros |  |  |  |  | baseline start none → 2016-10-25; baseline finish none → 2016-10-31 |
| 77 | Buscar tutoriales de affter efects |  |  |  |  | baseline start none → 2016-10-31; baseline finish none → 2016-11-02 |
| 78 | Registrar tiempos y % de realización de tareas | 2016-10-19 A | 2016-11-01 A | 0% → 100% | 0.03d → none | baseline start none → 2016-10-19; baseline finish none → 2016-11-01 |
| 79 | Comparar la planificación prevista con la real de la iteración 1 | 2016-10-19 A | 2016-11-01 A | 0% → 100% | 0.03d → none | baseline start none → 2016-10-19; baseline finish none → 2016-11-01 |
| 80 | Confeccionar informe de la iteración 1 | 2016-11-01 A | 2016-11-02 A | 0% → 100% | 0.03d → none | baseline start none → 2016-11-01; baseline finish none → 2016-11-02 |
| 81 | **Iteración 2** |  |  | 67% → 99% |  | baseline start none → 2016-11-02; baseline finish none → 2016-11-16 |
| 82 | Corregir y rectificar fallos de la iteración anterior |  |  |  |  | baseline start none → 2016-11-02; baseline finish none → 2016-11-03 |
| 83 | **Análisis de Riesgos** |  |  |  |  | baseline start none → 2016-11-03; baseline finish none → 2016-11-07 |
| 84 | Prioridades de los riesgos |  |  |  |  | baseline start none → 2016-11-03; baseline finish none → 2016-11-04 |
| 85 | Planes de contingencias |  |  |  |  | resources Antonio [80%]; George [80%] → Antonio [80%]; George [80%]; Jesús [80%]; baseline start none → 2016-11-04; baseline finish none → 2016-11-07 |
| 86 | Instalar los elementos de backend y seguridad |  | 2016-11-10 A | 75% → 100% | 0.12d → none | baseline start none → 2016-11-07; baseline finish none → 2016-11-10 |
| 87 | Boceto del diagrama de Flujo de Interfaces | 2016-11-10 A → 2016-11-10 |  | 25% → 0% |  | baseline start none → 2016-11-10; baseline finish none → 2016-11-10 |
| 88 | **Trabajar en el posicionamiento web** |  |  |  |  | baseline start none → 2016-11-10; baseline finish none → 2016-11-16 |
| 89 | Búsqueda de las palabras clave |  |  |  |  | baseline start none → 2016-11-10; baseline finish none → 2016-11-11 |
| 90 | Definir sinónimos y términos relacionados a esas palabras clave |  |  |  |  | baseline start none → 2016-11-11; baseline finish none → 2016-11-11 |
| 91 | Definir técnicas para que la araña de Google visite nuestra wen |  |  |  |  | baseline start none → 2016-11-11; baseline finish none → 2016-11-14 |
| 92 | Definir técnicas para aumentar la relevancia |  |  |  |  | baseline start none → 2016-11-14; baseline finish none → 2016-11-15 |
| 93 | **Aumentar la autoridad web** |  |  |  |  | baseline start none → 2016-11-15; baseline finish none → 2016-11-16 |
| 94 | Mediante Linkbuilding |  |  |  |  | baseline start none → 2016-11-15; baseline finish none → 2016-11-15 |
| 95 | Mediante Linkbaiting |  |  |  |  | baseline start none → 2016-11-15; baseline finish none → 2016-11-16 |
| 96 | **Hacer bocetos de la animación del logo** |  | 2016-11-15 A | 78% → 100% | 1d → none | baseline start none → 2016-11-02; baseline finish none → 2016-11-15 |
| 97 | Elegir Logo |  |  |  |  | baseline start none → 2016-11-02; baseline finish none → 2016-11-03 |
| 98 | Hacer composición básica |  |  |  |  | baseline start none → 2016-11-03; baseline finish none → 2016-11-09 |
| 99 | Probar diferentes efectos |  |  |  |  | baseline start none → 2016-11-09; baseline finish none → 2016-11-11 |
| 100 | Pensar cambios y mejoras | 2016-11-11 A | 2016-11-15 A | 0% → 100% | 1d → none | baseline start none → 2016-11-11; baseline finish none → 2016-11-15 |
| 101 | Registrar tiempos y % de realización de tareas |  |  |  |  | baseline start none → 2016-11-02; baseline finish none → 2016-11-15 |
| 102 | Comparar la planificación prevista con la real de la iteración 2 | 2016-11-02 A | 2016-11-15 A | 0% → 100% | 0.5d → none | baseline start none → 2016-11-02; baseline finish none → 2016-11-15 |
| 103 | Confeccionar informe de la iteración 2 |  |  |  |  | resources Jesús [20%]; George [20%]; Ruben [20%]; Antonio [20%] → Antonio [20%]; baseline start none → 2016-11-15; baseline finish none → 2016-11-16 |
| 104 | **Iteración 3** |  |  | 6% → 5% |  | baseline start none → 2016-11-16; baseline finish none → 2016-11-30 |
| 105 | Rellenar las tareas de las iteraciones 3,4 y 5 |  |  |  |  | baseline start none → 2016-11-16; baseline finish none → 2016-11-17 |
| 106 | Crear informe SDM |  |  |  |  | baseline start none → 2016-11-17; baseline finish none → 2016-11-17 |
| 107 | Crear PPW presentación |  |  |  |  | baseline start none → 2016-11-17; baseline finish none → 2016-11-18 |
| 108 | Informe del seguimiento |  |  |  |  | baseline start none → 2016-11-18; baseline finish none → 2016-11-18 |
| 109 | Revisar el diagrama del flujo de interfaces |  |  |  |  | baseline start none → 2016-11-18; baseline finish none → 2016-11-21 |
| 110 | **API RESTful** |  |  |  |  | baseline start none → 2016-11-21; baseline finish none → 2016-11-23 |
| 111 | Instalar Oauth 2.0 |  |  |  |  | baseline start none → 2016-11-21; baseline finish none → 2016-11-21 |
| 112 | Hacer pruebas de seguridad |  |  |  |  | baseline start none → 2016-11-21; baseline finish none → 2016-11-22 |
| 113 | Hacer pruebas de carga |  |  |  |  | baseline start none → 2016-11-22; baseline finish none → 2016-11-23 |
| 114 | Instalar todas las tecnologías de Back-End |  |  |  |  | baseline start none → 2016-11-23; baseline finish none → 2016-11-24 |
| 115 | Prueba Front-End |  |  |  |  | baseline start none → 2016-11-24; baseline finish none → 2016-11-24 |
| 116 | **Definir los APIs** |  |  |  |  | baseline start none → 2016-11-24; baseline finish none → 2016-11-28 |
| 117 | Propios |  |  |  |  | baseline start none → 2016-11-24; baseline finish none → 2016-11-25 |
| 118 | De terceros |  |  |  |  | baseline start none → 2016-11-25; baseline finish none → 2016-11-28 |
| 119 | Definir la transformación de formato: pdf - Audio |  |  |  |  | baseline start none → 2016-11-28; baseline finish none → 2016-11-29 |
| 120 | **Course Builder** | 2016-11-16 A → 2016-11-16 |  | 22% → 0% |  | baseline start none → 2016-11-16; baseline finish none → 2016-11-18 |
| 121 | Instalar máquina virtual | 2016-11-16 A → 2016-11-16 | 2016-11-16 A → 2016-11-16 | 100% → 0% | none → 4.75d | baseline start none → 2016-11-16; baseline finish none → 2016-11-16 |
| 122 | Instalar paquetes CourseBuilder |  |  |  |  | baseline start none → 2016-11-16; baseline finish none → 2016-11-17 |
| 123 | Subir al servidor de Google |  |  |  |  | baseline start none → 2016-11-17; baseline finish none → 2016-11-18 |
| 124 | **Curso MOOClearning(1º)** |  |  |  |  | baseline start none → 2016-11-21; baseline finish none → 2016-11-23 |
| 125 | Crear la base del curs |  |  |  |  | baseline start none → 2016-11-21; baseline finish none → 2016-11-21 |
| 126 | Crear las lecciones |  |  |  |  | baseline start none → 2016-11-22; baseline finish none → 2016-11-22 |
| 127 | Crear las unidades |  |  |  |  | baseline start none → 2016-11-23; baseline finish none → 2016-11-23 |
| 128 | **Acabar animación del logo** |  |  |  |  | baseline start none → 2016-11-16; baseline finish none → 2016-11-30 |
| 129 | Poner efecto al Logo |  |  |  |  | baseline start none → 2016-11-16; baseline finish none → 2016-11-18 |
| 130 | Añadir efectos a la composición |  |  |  |  | baseline start none → 2016-11-18; baseline finish none → 2016-11-24 |
| 131 | Hacer ajustes de efectos |  |  |  |  | baseline start none → 2016-11-24; baseline finish none → 2016-11-28 |
| 132 | Rematar animación y exportar |  |  |  |  | baseline start none → 2016-11-28; baseline finish none → 2016-11-30 |
| 133 | Registrar tiempos y % de realización de tareas |  |  |  |  | baseline start none → 2016-11-16; baseline finish none → 2016-11-29 |
| 134 | Comparar la planificación prevista con la real de la iteración 1 |  |  |  |  | baseline start none → 2016-11-16; baseline finish none → 2016-11-29 |
| 135 | Confeccionar informe de la iteración 1 |  |  |  |  | baseline start none → 2016-11-29; baseline finish none → 2016-11-30 |
| 136 | **Iteración 4** |  |  |  |  | baseline start none → 2016-11-30; baseline finish none → 2016-12-14 |
| 137 | **Estimación de costes** |  |  |  |  | baseline start none → 2016-11-30; baseline finish none → 2016-12-05 |
| 138 | 80 |  |  |  |  | baseline start none → 2016-11-30; baseline finish none → 2016-12-01 |
| 139 | Pricing to win |  |  |  |  | baseline start none → 2016-12-01; baseline finish none → 2016-12-01 |
| 140 | Puntos Objetivo y/o Puntos de Función |  |  |  |  | baseline start none → 2016-12-01; baseline finish none → 2016-12-02 |
| 141 | Comparación y discución de los valores obtenidos |  |  |  |  | baseline start none → 2016-12-02; baseline finish none → 2016-12-05 |

| ID | Task | Other |
| --- | --- | --- |
| 142 | **Pruebas BackEnd** | baseline start none → 2016-12-05; baseline finish none → 2016-12-08 |
| 143 | De Seguridad | baseline start none → 2016-12-05; baseline finish none → 2016-12-06 |
| 144 | De carga | baseline start none → 2016-12-06; baseline finish none → 2016-12-07 |
| 145 | De rendimiento | baseline start none → 2016-12-07; baseline finish none → 2016-12-08 |
| 146 | Validar el funcionamiento del BackEnd | baseline start none → 2016-12-08; baseline finish none → 2016-12-09 |
| 147 | Delegar autorización Oauth 2.0 | baseline start none → 2016-12-09; baseline finish none → 2016-12-09 |
| 148 | Diagrama de flujo de interfaces completado | resources none → Antonio [80%]; George [80%]; Jesús [80%]; baseline start none → 2016-12-09; baseline finish none → 2016-12-12 |
| 149 | **Curso MOOClearning(2º y 3º)** | baseline start none → 2016-11-30; baseline finish none → 2016-12-08 |
| 150 | Crear la base del curs | baseline start none → 2016-11-30; baseline finish none → 2016-12-02 |
| 151 | Crear las lecciones | baseline start none → 2016-12-02; baseline finish none → 2016-12-06 |
| 152 | Crear las unidades | baseline start none → 2016-12-06; baseline finish none → 2016-12-08 |
| 153 | Preparar presentación de los MOOClearning | baseline start none → 2016-12-08; baseline finish none → 2016-12-09 |
| 154 | Conversor PDF-MP3 | baseline start none → 2016-12-01; baseline finish none → 2016-12-09 |
| 155 | Revisar y completar tareas restantes el hito | baseline start none → 2016-12-12; baseline finish none → 2016-12-14 |
| 156 | **Comenzar con video promocional** | baseline start none → 2016-11-30; baseline finish none → 2016-12-13 |
| 157 | Establecer idea inicial | baseline start none → 2016-11-30; baseline finish none → 2016-12-01 |
| 158 | Hacer composición de tomas y escenas | baseline start none → 2016-12-01; baseline finish none → 2016-12-07 |
| 159 | Probar diferentes transiciones entre escenas | baseline start none → 2016-12-07; baseline finish none → 2016-12-09 |
| 160 | Pensar cambios y mejoras | baseline start none → 2016-12-09; baseline finish none → 2016-12-13 |
| 161 | Registrar tiempos y % de realización de tareas | baseline start none → 2016-11-30; baseline finish none → 2016-12-13 |
| 162 | Comparar la planificación prevista con la real de la iteración 1 | baseline start none → 2016-11-30; baseline finish none → 2016-12-13 |
| 163 | Confeccionar informe de la iteración 1 | baseline start none → 2016-12-13; baseline finish none → 2016-12-14 |
| 164 | **Iteración 5** | baseline start none → 2016-12-14; baseline finish none → 2016-12-23 |
| 165 | **Agenda del proyecto** | baseline start none → 2016-12-14; baseline finish none → 2016-12-15 |
| 166 | Relación de actividades(WBS) | resources none → Antonio [40%]; baseline start none → 2016-12-14; baseline finish none → 2016-12-14 |
| 167 | Plan general del proyecto(Hitos) | resources none → Jesús [40%]; baseline start none → 2016-12-14; baseline finish none → 2016-12-15 |
| 168 | Aplicar el modelo EVA en el proyecto | resources none → George [80%]; baseline start none → 2016-12-15; baseline finish none → 2016-12-16 |
| 169 | Terminar el documento de planificación | resources none → Jesús; baseline start none → 2016-12-16; baseline finish none → 2016-12-16 |
| 170 | Confeccionar el informe completo de iteraciones del Hito 1 | baseline start none → 2016-12-16; baseline finish none → 2016-12-19 |
| 171 | Crear el informe final de seguimiento | baseline start none → 2016-12-16; baseline finish none → 2016-12-19 |
| 172 | **Curso MOOClearning(4º)** | baseline start none → 2016-12-14; baseline finish none → 2016-12-16 |
| 173 | Crear la base del curso | resources Antonio [80%]; Dani [50%]; Jesús [80%]; Sergio → Antonio [40%]; Dani [50%]; Jesús [40%]; Sergio; baseline start none → 2016-12-14; baseline finish none → 2016-12-15 |
| 174 | Crear las lecciones | resources Antonio [80%]; Dani [50%]; Jesús [80%]; Sergio → Antonio [40%]; Dani [50%]; Jesús [40%]; Sergio; baseline start none → 2016-12-15; baseline finish none → 2016-12-15 |
| 175 | Crear las unidades | baseline start none → 2016-12-15; baseline finish none → 2016-12-16 |
| 176 | Revisar y preparar todos los entregables para la entrega | baseline start none → 2016-12-19; baseline finish none → 2016-12-23 |
| 177 | **Video promocional** | baseline start none → 2016-12-14; baseline finish none → 2016-12-22 |
| 178 | Probar mejoras | baseline start none → 2016-12-14; baseline finish none → 2016-12-16 |
| 179 | Añadir efectos | baseline start none → 2016-12-16; baseline finish none → 2016-12-20 |
| 180 | Añadir capa de ajuste | baseline start none → 2016-12-20; baseline finish none → 2016-12-22 |
| 181 | Registrar tiempos y % de realización de tareas | baseline start none → 2016-12-14; baseline finish none → 2016-12-22 |
| 182 | Comparar la planificación prevista con la real de la iteración 1 | baseline start none → 2016-12-14; baseline finish none → 2016-12-22 |
| 183 | Confeccionar informe de la iteración 1 | baseline start none → 2016-12-22; baseline finish none → 2016-12-23 |
| 184 | *Entregables: informe de seguimiento[SMBI],informe de iteraciones[PM] , documento planificación [PM], diagrama de flujo de interfaces[SMA], logo[PD],cartel[PD],animacion logo[PD],cursos MOOClearning[elearn] | baseline start none → 2016-12-23; baseline finish none → 2016-12-23 |
| 186 | **Colores de las asignaturas** | baseline start none → 2016-09-12; baseline finish none → 2016-09-12 |
| 187 | Proyecto Multimedia | baseline start none → 2016-09-12; baseline finish none → 2016-09-12 |
| 188 | Sistemas de Difusion Multimedia | baseline start none → 2016-09-12; baseline finish none → 2016-09-12 |
| 189 | Sistemas Multimedia Basados en Internet | baseline start none → 2016-09-12; baseline finish none → 2016-09-12 |
| 190 | E- Learning | baseline start none → 2016-09-12; baseline finish none → 2016-09-12 |
| 191 | Sistemas Multimedia Avanzados | baseline start none → 2016-09-12; baseline finish none → 2016-09-12 |
| 192 | Postproducción Digital | baseline start none → 2016-09-12; baseline finish none → 2016-09-12 |
| 193 | Negocios Multimedia | baseline start none → 2016-09-12; baseline finish none → 2016-09-12 |

## Version 5 (saved 2016-11-29)

Note of the change: - corregido el informe de tareas de la iteración 2 - entrega del informe de tareas de la iteración 3 - informacion real del trabajo de la iteración 3 en el project

Last finish stays 2016-12-23. Complete tasks 41 → 60.

Changed:

| ID | Task | Start | Finish | Complete | Total float | Other |
| --- | --- | --- | --- | --- | --- | --- |
| 55 | **HITO 1** |  |  | 39% → 59% |  |  |
| 104 | **Iteración 3** |  |  | 5% → 97% |  |  |
| 110 | **API RESTful** | 2016-11-21 A |  | 0% → 75% | 0.78d → 5.28d |  |
| 112 | Hacer pruebas de seguridad | 2016-11-21 A | 2016-11-22 A | 0% → 100% | 0.78d → none |  |
| 113 | Hacer pruebas de carga | 2016-11-22 A | 2016-11-23 A | 0% → 100% | 0.78d → none |  |
| 114 | Instalar todas las tecnologías de Back-End | 2016-11-23 A | 2016-11-24 A | 0% → 100% | 0.78d → none |  |
| 115 | Prueba Front-End | 2016-11-24 A | 2016-11-24 A | 0% → 100% | 0.78d → none |  |
| 116 | **Definir los APIs** | 2016-11-24 A | 2016-11-28 A | 0% → 100% | 0.78d → none |  |
| 117 | Propios | 2016-11-24 A | 2016-11-25 A | 0% → 100% | 0.78d → none |  |
| 118 | De terceros | 2016-11-25 A | 2016-11-28 A | 0% → 100% | 0.78d → none |  |
| 119 | Definir la transformación de formato: pdf - Audio | 2016-11-28 A |  | 0% → 50% |  |  |
| 120 | **Course Builder** | 2016-11-16 A | 2016-11-18 A | 0% → 100% | 4.75d → none |  |
| 121 | Instalar máquina virtual | 2016-11-16 A | 2016-11-16 A | 0% → 100% | 4.75d → none |  |
| 122 | Instalar paquetes CourseBuilder | 2016-11-16 A | 2016-11-17 A | 0% → 100% | 4.75d → none |  |
| 123 | Subir al servidor de Google | 2016-11-17 A | 2016-11-18 A | 0% → 100% | 4.75d → none |  |
| 124 | **Curso MOOClearning(1º)** | 2016-11-21 A | 2016-11-23 A | 0% → 100% |  |  |
| 125 | Crear la base del curs | 2016-11-21 A | 2016-11-21 A | 0% → 100% | 4.4d → none |  |
| 126 | Crear las lecciones | 2016-11-22 A | 2016-11-22 A | 0% → 100% | 4.4d → none |  |
| 127 | Crear las unidades | 2016-11-23 A | 2016-11-23 A | 0% → 100% | 4.4d → none |  |
| 128 | **Acabar animación del logo** | 2016-11-16 A | 2016-11-30 A | 0% → 100% | 0d → none |  |
| 129 | Poner efecto al Logo | 2016-11-16 A | 2016-11-18 A | 0% → 100% | 0d → none |  |
| 130 | Añadir efectos a la composición | 2016-11-18 A | 2016-11-24 A | 0% → 100% | 0d → none |  |
| 131 | Hacer ajustes de efectos | 2016-11-24 A | 2016-11-28 A | 0% → 100% | 0d → none |  |
| 132 | Rematar animación y exportar | 2016-11-28 A | 2016-11-30 A | 0% → 100% | 0d → none |  |
| 133 | Registrar tiempos y % de realización de tareas | 2016-11-16 A | 2016-11-29 A | 0% → 100% | 0d → none |  |
| 134 | Comparar la planificación prevista con la real de la iteración 3 | 2016-11-16 A | 2016-11-29 A | 0% → 100% | 0d → none | was named Comparar la planificación prevista con la real de la iteración 1 |
| 135 | Confeccionar informe de la iteración 3 | 2016-11-29 A | 2016-11-30 A | 0% → 100% | 0d → none | was named Confeccionar informe de la iteración 1 |
| 162 | Comparar la planificación prevista con la real de la iteración 4 |  |  |  |  | was named Comparar la planificación prevista con la real de la iteración 1 |
| 163 | Confeccionar informe de la iteración 4 |  |  |  |  | was named Confeccionar informe de la iteración 1 |
| 182 | Comparar la planificación prevista con la real de la iteración 5 |  |  |  |  | was named Comparar la planificación prevista con la real de la iteración 1 |
| 183 | Confeccionar informe de la iteración 5 |  |  |  |  | was named Confeccionar informe de la iteración 1 |

## Version 6 (saved 2016-12-19)

Note of the change: Subido el Informe de la Iteración 4

Last finish stays 2016-12-23.

Changed:

| ID | Task | Other |
| --- | --- | --- |
| 138 | Ley de Parkinson | was named 80 |
