# Tareas

How a schedule from MS Project changed from version to version. A marks actual dates.

## Version 1 (saved 2017-02-07)

| ID | WBS | Task | Duration | Start | Finish | Predecessors | Complete | Total float |
| --- | --- | --- | --- | --- | --- | --- | --- | --- |
| 2 | 1 | **HITO 0** | 27.38d | 2016-09-12 | 2016-10-19 |  |  | 0d |
| 3 | 1.1 | **Iteración 1** | 7.12d | 2016-09-12 | 2016-09-21 |  |  | 0d |
| 4 |  | Definir el público objetivo | 6h | 2016-09-12 | 2016-09-12 |  |  | 0d |
| 5 |  | Definir los problemas y soluciones de esos usuarios | 6h | 2016-09-12 | 2016-09-13 | 4 |  | 0d |
| 6 |  | Deninir métricas | 5h | 2016-09-13 | 2016-09-14 | 5 |  | 0d |
| 7 |  | Especificar los costes y los ingresos | 1d | 2016-09-14 | 2016-09-15 | 6 |  | 0d |
| 8 |  | Definir los canales | 4h | 2016-09-14 | 2016-09-14 | 6 |  | 0.5d |
| 9 |  | Rellenar documento de Concepto del proyecto | 4d | 2016-09-15 | 2016-09-21 | 6, 7, 8 |  | 0d |
| 10 |  | * Entregables Iteración 1: LEAN Canvas y especificación del mismo | 0d | 2016-09-12 | 2016-09-12 |  |  | 7.12d |
| 11 | 1.2 | **Iteración 2** | 10d | 2016-09-21 | 2016-10-05 | 3 |  | 0d |
| 12 |  | Definir los tipos de usuarios | 4h | 2016-09-21 | 2016-09-21 |  |  | 0d |
| 13 |  | Definir las interfaces externas | 4h | 2016-09-21 | 2016-09-22 | 12 |  | 0d |
| 14 | 1.2.3 | **Definir los requisitos funcionales** | 2.62d | 2016-09-22 | 2016-09-26 | 12, 13 |  | 0d |
| 15 |  | De usuario invitado | 2h | 2016-09-22 | 2016-09-22 |  |  | 0d |
| 16 |  | De usuario registrado free | 6h | 2016-09-22 | 2016-09-23 | 15 |  | 0d |
| 17 |  | De usuario registrado premium | 6h | 2016-09-23 | 2016-09-23 | 16 |  | 0d |
| 18 |  | Del usuario profesor | 4h | 2016-09-23 | 2016-09-26 | 17 |  | 0d |
| 19 |  | Del usuario tipo Alumno | 3h | 2016-09-26 | 2016-09-26 | 18 |  | 0d |
| 20 |  | Del Administrador | 3h | 2016-09-23 | 2016-09-26 | 17 |  | 0.5d |
| 21 |  | Elaborar el Presupuesto (hoja de cálculo) | 5h | 2016-09-26 | 2016-09-27 | 14 |  | 0d |
| 22 | 1.2.5 | **Requisitos no Funcionales** | 3.5d | 2016-09-27 | 2016-09-30 | 21 |  | 0d |
| 23 |  | Integridad | 1d | 2016-09-27 | 2016-09-28 |  |  | 0d |
| 24 |  | Fiabilidad | 5h | 2016-09-28 | 2016-09-28 | 23 |  | 0d |
| 25 |  | Mantenimiento | 4h | 2016-09-29 | 2016-09-29 | 24 |  | 0d |
| 26 |  | Privacidad | 5h | 2016-09-29 | 2016-09-30 | 25 |  | 0d |
| 27 |  | Usabilidad y Accesibilidad | 3h | 2016-09-30 | 2016-09-30 | 26 |  | 0d |
| 28 |  | Autentificación | 3h | 2016-09-30 | 2016-09-30 | 27 |  | 0d |
| 29 |  | Definir funcionalidades del sistema(casos de uso) | 4h | 2016-09-30 | 2016-10-03 | 22 |  | 0d |
| 30 |  | Sketch de la infografía | 1d | 2016-10-03 | 2016-10-04 | 29 |  | 0d |
| 31 |  | Métricas a utilizar y software del proyecto | 6h | 2016-10-04 | 2016-10-05 | 30 |  | 0d |
| 32 |  | Especificar API's a utilizar | 3h | 2016-09-26 | 2016-09-27 | 14 |  | 4.75d |
| 33 |  | Medios de difusión de la plataforma | 3h | 2016-09-27 | 2016-09-27 | 32 |  | 4.75d |
| 34 |  | Especificar el tipo de contenido de la web | 4h | 2016-09-27 | 2016-09-27 | 33 |  | 4.75d |
| 35 |  | Definir los derechos de copyright | 3h | 2016-09-28 | 2016-09-28 | 34 |  | 4.75d |
| 36 |  | * Entregables Iteración 2: Documento de Especificación del proyecto + Hoja de cálculo de presupuesto | 0d | 2016-09-21 | 2016-09-21 |  |  | 10d |
| 37 | 1.3 | **Iteración 3** | 10.25d | 2016-10-05 | 2016-10-19 | 11 |  | 0d |
| 38 |  | Observaciones GitHub | 1d | 2016-10-05 | 2016-10-06 |  |  | 0d |
| 39 |  | Introducir tareas en el Project | 6h | 2016-10-06 | 2016-10-06 | 38 |  | 0d |
| 40 |  | Arreglar hoja de presupuestos | 6h | 2016-10-06 | 2016-10-07 | 39 |  | 0d |
| 41 | 1.3.4 | **Mockups del sistema** | 3.75d | 2016-10-07 | 2016-10-13 | 40 |  | 0d |
| 42 |  | Del usuario no registrado | 5h | 2016-10-07 | 2016-10-10 |  |  | 0d |
| 43 |  | Del usuario registrado Free | 11h | 2016-10-10 | 2016-10-11 | 42 |  | 1.75d |
| 44 |  | Del profesor | 11h | 2016-10-10 | 2016-10-11 | 42 |  | 0d |
| 45 |  | Del usuario Registrado premium | 7h | 2016-10-11 | 2016-10-12 | 44 |  | 0d |
| 46 |  | Del alumno | 7h | 2016-10-12 | 2016-10-13 | 45 |  | 0d |
| 47 |  | Rectificar todos los fallos del documentos especificados por el profesor | 1d | 2016-10-06 | 2016-10-07 | 39 |  | 7.5d |
| 48 |  | Crear diagrama de clases | 11h | 2016-10-13 | 2016-10-14 | 41 |  | 0d |
| 49 |  | Arquitectura del Sistema | 1d | 2016-10-14 | 2016-10-17 | 48 |  | 0d |
| 50 |  | Especificación de elementos y tecnologías de seguridad y autenticación | 10h | 2016-10-17 | 2016-10-18 | 49 |  | 0d |
| 51 |  | Especificación API Rest y del modelo de datos | 3h | 2016-10-13 | 2016-10-13 | 41 |  | 3.5d |
| 52 |  | Instalar Apache | 3h | 2016-10-19 | 2016-10-19 | 50 |  | 0d |
| 53 |  | Instalar MySQL | 1h | 2016-10-13 | 2016-10-13 | 51 |  | 3.5d |
| 54 |  | *Entregables Iteración 3: Documento final de Especificación y Requisitos, Presupuesto y documento con las tareas Project | 0d | 2016-10-05 | 2016-10-05 |  |  | 10.25d |
| 55 | 2 | **HITO 1** | 47.02d | 2016-10-19 A | 2016-12-23 | 2 | 84% | 0d |
| 56 | 2.1 | **Iteración 1** | 10.03d | 2016-10-19 A | 2016-11-02 A |  | 100% |  |
| 57 |  | Corregir comentarios Villagra y Berna | 5h | 2016-10-19 A | 2016-10-19 A |  | 100% |  |
| 58 | 2.1.2 | **Detallar plan de iteraciones del mes de noviembre** | 1.5d | 2016-10-20 A | 2016-10-21 A | 57 | 100% |  |
| 59 |  | Crear Subtareas Project | 4h | 2016-10-20 A | 2016-10-20 A |  | 100% |  |
| 60 |  | Definir procedencias Project | 4h | 2016-10-20 A | 2016-10-20 A | 59 | 100% |  |
| 61 |  | Crear los recursos en Project | 4h | 2016-10-21 A | 2016-10-21 A | 60 | 100% |  |
| 62 |  | Realizar MOOC LeanCanvas | 2d | 2016-10-21 A | 2016-10-25 A | 58 | 100% |  |
| 63 | 2.1.4 | **Configuración e instalación de los elementos de Backend y Seguridad** | 2.5d | 2016-10-25 A | 2016-10-27 A | 62 | 100% |  |
| 64 |  | Instalación MySQL | 4h | 2016-10-25 A | 2016-10-25 A |  | 100% |  |
| 65 |  | Configuración Apache | 1d | 2016-10-26 A | 2016-10-26 A | 64 | 100% |  |
| 66 |  | Crear todas las tablas en la BD | 1d | 2016-10-27 A | 2016-10-27 A | 65 | 100% |  |
| 67 | 2.1.5 | **Identificar los riesgos** | 3.38d | 2016-10-28 A | 2016-11-02 A | 63 | 100% |  |
| 68 |  | De Tecnología | 6h | 2016-10-28 A | 2016-10-28 A |  | 100% |  |
| 69 |  | De Personas | 4h | 2016-10-28 A | 2016-10-31 A | 68 | 100% |  |
| 70 |  | Organizacional | 4h | 2016-10-31 A | 2016-10-31 A | 69 | 100% |  |
| 71 |  | Herramientas | 4h | 2016-10-31 A | 2016-11-01 A | 70 | 100% |  |

| ID | WBS | Task | Duration | Start | Finish | Predecessors | Complete | Total float |
| --- | --- | --- | --- | --- | --- | --- | --- | --- |
| 72 |  | De Requerimientos | 4h | 2016-11-01 A | 2016-11-01 A | 71 | 100% |  |
| 73 |  | De Estimación | 5h | 2016-11-01 A | 2016-11-02 A | 72 | 100% |  |
| 74 | 2.1.6 | **Empezar con la animación del logo** | 9.4d | 2016-10-20 A | 2016-11-02 A | 57 | 100% |  |
| 75 |  | Hacer bocetos del logo | 3.5d | 2016-10-20 A | 2016-10-25 A |  | 100% |  |
| 76 |  | Buscar ejemplos de intros | 4d | 2016-10-25 A | 2016-10-31 A | 75 | 100% |  |
| 77 |  | Buscar tutoriales de affter efects | 1.9d | 2016-10-31 A | 2016-11-02 A | 76 | 100% |  |
| 78 |  | Registrar tiempos y % de realización de tareas | 9.5d | 2016-10-19 A | 2016-11-01 A |  | 100% |  |
| 79 |  | Comparar la planificación prevista con la real de la iteración 1 | 9.5d | 2016-10-19 A | 2016-11-01 A |  | 100% |  |
| 80 |  | Confeccionar informe de la iteración 1 | 0.5d | 2016-11-01 A | 2016-11-02 A | 78, 79 | 100% |  |
| 81 | 2.2 | **Iteración 2** | 10d | 2016-11-02 A | 2016-11-16 | 56 | 99% | 0d |
| 82 |  | Corregir y rectificar fallos de la iteración anterior | 1d | 2016-11-02 A | 2016-11-03 A |  | 100% |  |
| 83 | 2.2.2 | **Análisis de Riesgos** | 1.75d | 2016-11-03 A | 2016-11-07 A | 82 | 100% |  |
| 84 |  | Prioridades de los riesgos | 6h | 2016-11-03 A | 2016-11-04 A |  | 100% |  |
| 85 |  | Planes de contingencias | 1d | 2016-11-04 A | 2016-11-07 A | 84 | 100% |  |
| 86 |  | Instalar los elementos de backend y seguridad | 3d | 2016-11-07 A | 2016-11-10 A | 85 | 100% |  |
| 87 |  | Boceto del diagrama de Flujo de Interfaces | 4h | 2016-11-10 | 2016-11-10 | 86 |  | 3.75d |
| 88 | 2.2.5 | **Trabajar en el posicionamiento web** | 3.38d | 2016-11-10 A | 2016-11-16 A | 87 | 100% |  |
| 89 |  | Búsqueda de las palabras clave | 4h | 2016-11-10 A | 2016-11-11 A |  | 100% |  |
| 90 |  | Definir sinónimos y términos relacionados a esas palabras clave | 4h | 2016-11-11 A | 2016-11-11 A | 89 | 100% |  |
| 91 |  | Definir técnicas para que la araña de Google visite nuestra wen | 5h | 2016-11-11 A | 2016-11-14 A | 90 | 100% |  |
| 92 |  | Definir técnicas para aumentar la relevancia | 6h | 2016-11-14 A | 2016-11-15 A | 91 | 100% |  |
| 93 | 2.2.5.5 | **Aumentar la autoridad web** | 1d | 2016-11-15 A | 2016-11-16 A | 92 | 100% |  |
| 94 |  | Mediante Linkbuilding | 4h | 2016-11-15 A | 2016-11-15 A |  | 100% |  |
| 95 |  | Mediante Linkbaiting | 4h | 2016-11-15 A | 2016-11-16 A | 94 | 100% |  |
| 96 | 2.2.6 | **Hacer bocetos de la animación del logo** | 9d | 2016-11-02 A | 2016-11-15 A |  | 100% |  |
| 97 |  | Elegir Logo | 1d | 2016-11-02 A | 2016-11-03 A |  | 100% |  |
| 98 |  | Hacer composición básica | 4d | 2016-11-03 A | 2016-11-09 A | 97 | 100% |  |
| 99 |  | Probar diferentes efectos | 2d | 2016-11-09 A | 2016-11-11 A | 98 | 100% |  |
| 100 |  | Pensar cambios y mejoras | 2d | 2016-11-11 A | 2016-11-15 A | 99 | 100% |  |
| 101 |  | Registrar tiempos y % de realización de tareas | 9.5d | 2016-11-02 A | 2016-11-15 A |  | 100% |  |
| 102 |  | Comparar la planificación prevista con la real de la iteración 2 | 9.5d | 2016-11-02 A | 2016-11-15 A |  | 100% |  |
| 103 |  | Confeccionar informe de la iteración 2 | 0.5d | 2016-11-15 A | 2016-11-16 A | 102, 101 | 100% |  |
| 104 | 2.3 | **Iteración 3** | 10d | 2016-11-16 A | 2016-11-30 | 81 | 97% | 0d |
| 105 |  | Rellenar las tareas de las iteraciones 3,4 y 5 | 8.8h | 2016-11-16 A | 2016-11-17 A |  | 100% |  |
| 106 |  | Crear informe SDM | 2h | 2016-11-17 A | 2016-11-17 A | 105 | 100% |  |
| 107 |  | Crear PPW presentación | 3h | 2016-11-17 A | 2016-11-18 A | 106 | 100% |  |
| 108 |  | Informe del seguimiento | 4h | 2016-11-18 A | 2016-11-18 A | 107 | 100% |  |
| 109 |  | Revisar el diagrama del flujo de interfaces | 4h | 2016-11-18 | 2016-11-21 | 108 |  | 0.5d |
| 110 | 2.3.6 | **API RESTful** | 2d | 2016-11-21 A | 2016-11-23 | 109 | 75% | 5.28d |
| 111 |  | Instalar Oauth 2.0 | 4h | 2016-11-21 | 2016-11-21 |  |  | 6.78d |
| 112 |  | Hacer pruebas de seguridad | 6h | 2016-11-21 A | 2016-11-22 A | 111 | 100% |  |
| 113 |  | Hacer pruebas de carga | 6h | 2016-11-22 A | 2016-11-23 A | 112 | 100% |  |
| 114 |  | Instalar todas las tecnologías de Back-End | 1d | 2016-11-23 A | 2016-11-24 A | 110 | 100% |  |
| 115 |  | Prueba Front-End | 4h | 2016-11-24 A | 2016-11-24 A | 114 | 100% |  |
| 116 | 2.3.9 | **Definir los APIs** | 2d | 2016-11-24 A | 2016-11-28 A | 115 | 100% |  |
| 117 |  | Propios | 1d | 2016-11-24 A | 2016-11-25 A |  | 100% |  |
| 118 |  | De terceros | 1d | 2016-11-25 A | 2016-11-28 A | 117 | 100% |  |
| 119 |  | Definir la transformación de formato: pdf - Audio | 1d | 2016-11-28 A | 2016-11-29 | 116 | 50% | 0.78d |
| 120 | 2.3.11 | **Course Builder** | 2.25d | 2016-11-16 A | 2016-11-18 A |  | 100% |  |
| 121 |  | Instalar máquina virtual | 4h | 2016-11-16 A | 2016-11-16 A |  | 100% |  |
| 122 |  | Instalar paquetes CourseBuilder | 4h | 2016-11-16 A | 2016-11-17 A | 121 | 100% |  |
| 123 |  | Subir al servidor de Google | 10h | 2016-11-17 A | 2016-11-18 A | 122 | 100% |  |
| 124 | 2.3.12 | **Curso MOOClearning(1º)** | 3d | 2016-11-21 A | 2016-11-23 A | 120 | 100% |  |
| 125 |  | Crear la base del curs | 1d | 2016-11-21 A | 2016-11-21 A |  | 100% |  |
| 126 |  | Crear las lecciones | 1d | 2016-11-22 A | 2016-11-22 A | 125 | 100% |  |
| 127 |  | Crear las unidades | 1d | 2016-11-23 A | 2016-11-23 A | 126 | 100% |  |
| 128 | 2.3.13 | **Acabar animación del logo** | 10d | 2016-11-16 A | 2016-11-30 A |  | 100% |  |
| 129 |  | Poner efecto al Logo | 2d | 2016-11-16 A | 2016-11-18 A |  | 100% |  |
| 130 |  | Añadir efectos a la composición | 4d | 2016-11-18 A | 2016-11-24 A | 129 | 100% |  |
| 131 |  | Hacer ajustes de efectos | 2d | 2016-11-24 A | 2016-11-28 A | 130 | 100% |  |
| 132 |  | Rematar animación y exportar | 2d | 2016-11-28 A | 2016-11-30 A | 131 | 100% |  |
| 133 |  | Registrar tiempos y % de realización de tareas | 9.5d | 2016-11-16 A | 2016-11-29 A |  | 100% |  |
| 134 |  | Comparar la planificación prevista con la real de la iteración 3 | 9.5d | 2016-11-16 A | 2016-11-29 A |  | 100% |  |
| 135 |  | Confeccionar informe de la iteración 3 | 0.5d | 2016-11-29 A | 2016-11-30 A | 134, 133 | 100% |  |
| 136 | 2.4 | **Iteración 4** | 10d | 2016-11-30 A | 2016-12-14 | 104 | 82% | 0d |
| 137 | 2.4.1 | **Estimación de costes** | 3d | 2016-11-30 | 2016-12-05 |  |  | 0d |
| 138 |  | Ley de Parkinson | 6h | 2016-11-30 | 2016-12-01 |  |  | 0d |
| 139 |  | Pricing to win | 6h | 2016-12-01 | 2016-12-01 | 138 |  | 0d |
| 140 |  | Puntos Objetivo y/o Puntos de Función | 6h | 2016-12-01 | 2016-12-02 | 139 |  | 0d |
| 141 |  | Comparación y discución de los valores obtenidos | 6h | 2016-12-02 | 2016-12-05 | 140 |  | 0d |

| ID | WBS | Task | Duration | Start | Finish | Predecessors | Complete | Total float | Constraint |
| --- | --- | --- | --- | --- | --- | --- | --- | --- | --- |
| 142 | 2.4.2 | **Pruebas BackEnd** | 3d | 2016-12-05 A | 2016-12-08 | 137 | 67% | 4d |  |
| 143 |  | De Seguridad | 1d | 2016-12-05 A | 2016-12-06 A |  | 100% |  |  |
| 144 |  | De carga | 1d | 2016-12-06 | 2016-12-07 | 143 |  | 5d |  |
| 145 |  | De rendimiento | 1d | 2016-12-07 A | 2016-12-08 A | 144 | 100% |  |  |
| 146 |  | Validar el funcionamiento del BackEnd | 5h | 2016-12-08 A | 2016-12-09 A | 142 | 100% |  |  |
| 147 |  | Delegar autorización Oauth 2.0 | 5h | 2016-12-09 A | 2016-12-09 | 146 | 25% | 2.75d |  |
| 148 |  | Diagrama de flujo de interfaces completado | 1d | 2016-12-09 A | 2016-12-12 A | 147 | 100% |  |  |
| 149 | 2.4.6 | **Curso MOOClearning(2º y 3º)** | 6d | 2016-11-30 A | 2016-12-08 A |  | 100% |  |  |
| 150 |  | Crear la base del curs | 2d | 2016-11-30 A | 2016-12-02 A |  | 100% |  |  |
| 151 |  | Crear las lecciones | 2d | 2016-12-02 A | 2016-12-06 A | 150 | 100% |  |  |
| 152 |  | Crear las unidades | 2d | 2016-12-06 A | 2016-12-08 A | 151 | 100% |  |  |
| 153 |  | Preparar presentación de los MOOClearning | 10h | 2016-12-08 A | 2016-12-09 A | 149 | 100% |  |  |
| 154 |  | Conversor PDF-MP3 | 7d | 2016-12-01 A | 2016-12-09 |  | 50% | 2.4d | start no earlier than 2016-12-01 |
| 155 |  | Revisar y completar tareas restantes el hito | 1.5d | 2016-12-12 | 2016-12-14 | 148 |  | 0.25d |  |
| 156 | 2.4.10 | **Comenzar con video promocional** | 9d | 2016-11-30 A | 2016-12-13 A |  | 100% |  |  |
| 157 |  | Establecer idea inicial | 1d | 2016-11-30 A | 2016-12-01 A |  | 100% |  |  |
| 158 |  | Hacer composición de tomas y escenas | 4d | 2016-12-01 A | 2016-12-07 A | 157 | 100% |  |  |
| 159 |  | Probar diferentes transiciones entre escenas | 2d | 2016-12-07 A | 2016-12-09 A | 158 | 100% |  |  |
| 160 |  | Pensar cambios y mejoras | 2d | 2016-12-09 A | 2016-12-13 A | 159 | 100% |  |  |
| 161 |  | Registrar tiempos y % de realización de tareas | 9.5d | 2016-11-30 A | 2016-12-13 A |  | 100% |  |  |
| 162 |  | Comparar la planificación prevista con la real de la iteración 4 | 9.5d | 2016-11-30 A | 2016-12-13 A |  | 100% |  |  |
| 163 |  | Confeccionar informe de la iteración 4 | 0.5d | 2016-12-13 A | 2016-12-14 A | 162, 161 | 100% |  |  |
| 164 | 2.5 | **Iteración 5** | 7d | 2016-12-14 A | 2016-12-23 | 136 | 27% | 0d |  |
| 165 | 2.5.1 | **Agenda del proyecto** | 1.12d | 2016-12-14 | 2016-12-15 |  |  | 0.25d |  |
| 166 |  | Relación de actividades(WBS) | 4h | 2016-12-14 | 2016-12-14 |  |  | 0.25d |  |
| 167 |  | Plan general del proyecto(Hitos) | 5h | 2016-12-14 | 2016-12-15 | 166 |  | 0.25d |  |
| 168 |  | Aplicar el modelo EVA en el proyecto | 1d | 2016-12-15 | 2016-12-16 | 165 |  | 0.25d |  |
| 169 |  | Terminar el documento de planificación | 3h | 2016-12-16 | 2016-12-16 | 168 |  | 0.25d |  |
| 170 |  | Confeccionar el informe completo de iteraciones del Hito 1 | 6h | 2016-12-16 | 2016-12-19 | 169 |  | 0.25d |  |
| 171 |  | Crear el informe final de seguimiento | 5h | 2016-12-16 | 2016-12-19 | 169 |  | 3.88d |  |
| 172 | 2.5.6 | **Curso MOOClearning(4º)** | 1.88d | 2016-12-14 A | 2016-12-16 A |  | 100% |  |  |
| 173 |  | Crear la base del curso | 5h | 2016-12-14 A | 2016-12-15 A |  | 100% |  |  |
| 174 |  | Crear las lecciones | 5h | 2016-12-15 A | 2016-12-15 A | 173 | 100% |  |  |
| 175 |  | Crear las unidades | 5h | 2016-12-15 A | 2016-12-16 A | 174 | 100% |  |  |
| 176 |  | Revisar y preparar todos los entregables para la entrega | 3.5d | 2016-12-19 | 2016-12-23 | 170, 171 |  | 0.25d |  |
| 177 | 2.5.8 | **Video promocional** | 6d | 2016-12-14 A | 2016-12-22 A |  | 100% |  |  |
| 178 |  | Probar mejoras | 2d | 2016-12-14 A | 2016-12-16 A |  | 100% |  |  |
| 179 |  | Añadir efectos | 2d | 2016-12-16 A | 2016-12-20 A | 178 | 100% |  |  |
| 180 |  | Añadir capa de ajuste | 2d | 2016-12-20 A | 2016-12-22 A | 179 | 100% |  |  |
| 181 |  | Registrar tiempos y % de realización de tareas | 6.5d | 2016-12-14 | 2016-12-22 |  |  | 0d |  |
| 182 |  | Comparar la planificación prevista con la real de la iteración 5 | 6.5d | 2016-12-14 | 2016-12-22 |  |  | 0d |  |
| 183 |  | Confeccionar informe de la iteración 5 | 0.5d | 2016-12-22 | 2016-12-23 | 181, 182 |  | 0d |  |
| 184 |  | *Entregables: informe de seguimiento[SMBI],informe de iteraciones[PM] , documento planificación [PM], diagrama de flujo de interfaces[SMA], logo[PD],cartel[PD],animacion logo[PD],cursos MOOClearning[elearn] | 0d | 2016-12-23 | 2016-12-23 | 164 |  | 0d |  |
| 185 |  | HITO 2 | 1d? | 2016-09-12 | 2016-09-12 |  |  | 73.4d |  |
| 186 | 4 | **HITO 3** | 1d? | 2016-09-12 | 2016-09-12 |  |  | 73.4d |  |
| 187 |  | Iteración 1 | 1d? | 2016-09-12 | 2016-09-12 |  |  | 73.4d |  |
| 188 |  | Presupuesto TAG | 1d? | 2016-09-12 | 2016-09-12 |  |  | 73.4d |  |
| 189 |  | Shaber básico por programa | 1d? | 2016-09-12 | 2016-09-12 |  |  | 73.4d |  |
| 190 |  | <Tarea nueva> | 1d? | 2016-09-12 | 2016-09-12 |  |  | 73.4d |  |
| 191 |  | <Tarea nueva> | 1d? | 2016-09-12 | 2016-09-12 |  |  | 73.4d |  |
| 192 |  | Iteración 2 | 1d? | 2016-09-12 | 2016-09-12 |  |  | 73.4d |  |
| 193 |  | Iteración 3 | 1d? | 2016-09-12 | 2016-09-12 |  |  | 73.4d |  |
| 194 |  | Iteración 4 | 1d? | 2016-09-12 | 2016-09-12 |  |  | 73.4d |  |
| 195 |  | Iteración 5 | 1d? | 2016-09-12 | 2016-09-12 |  |  | 73.4d |  |
| 196 | 5 | **HITO 4** | 1d? | 2016-09-12 | 2016-09-12 |  |  | 73.4d |  |
| 197 |  | Iteración 1 | 1d? | 2016-09-12 | 2016-09-12 |  |  | 73.4d |  |
| 198 |  | Iteración 2 | 1d? | 2016-09-12 | 2016-09-12 |  |  | 73.4d |  |
| 199 |  | Iteración 3 | 1d? | 2016-09-12 | 2016-09-12 |  |  | 73.4d |  |
| 200 |  | Iteración 4 | 1d? | 2016-09-12 | 2016-09-12 |  |  | 73.4d |  |
| 202 | 6 | **Colores de las asignaturas** | 0d | 2016-09-12 | 2016-09-12 |  |  |  |  |
| 203 |  | Proyecto Multimedia | 0d | 2016-09-12 | 2016-09-12 |  |  | 74.4d |  |
| 204 |  | Sistemas de Difusion Multimedia | 0d | 2016-09-12 | 2016-09-12 |  |  | 74.4d |  |
| 205 |  | Sistemas Multimedia Basados en Internet | 0d | 2016-09-12 | 2016-09-12 |  |  | 74.4d |  |
| 206 |  | E- Learning | 0d | 2016-09-12 | 2016-09-12 |  |  | 74.4d |  |
| 207 |  | Sistemas Multimedia Avanzados | 0d | 2016-09-12 | 2016-09-12 |  |  | 74.4d |  |
| 208 |  | Postproducción Digital | 0d | 2016-09-12 | 2016-09-12 |  |  | 74.4d |  |
| 209 |  | Negocios Multimedia | 0d | 2016-09-12 | 2016-09-12 |  |  | 74.4d |  |

## Version 2 (saved 2017-02-26)

Note of the change: Introducción de las tareas, precedencias y recursos de las Iteraciones 1,2 y 3 del Hito 3 en el Project

Last finish 2016-12-23 → 2017-04-06 (+104d).

Added:

| ID | Task | Duration | Start | Finish | Predecessors | Resources |
| --- | --- | --- | --- | --- | --- | --- |
| 189 | Repasar OpenGL | 6h | 2017-01-31 | 2017-02-01 | 188 | Antonio [80%]; George [80%]; Jesús [80%] |
| 190 | Empezar a ver WebGL | 6h | 2017-02-01 | 2017-02-01 | 189 | Antonio [80%]; George [80%]; Jesús [80%] |
| 192 | Crear la plantilla CSS de la web | 2d | 2017-02-02 | 2017-02-06 | 191 | Antonio [80%]; George [80%]; Jesús [80%] |
| 193 | Búsqueda de un nuevo nombre para el proyecto | 4h | 2017-02-06 | 2017-02-07 | 192 | Antonio [80%]; George [80%]; Jesús [80%] |
| 194 | Búsqueda y compra de un Dominio | 2h | 2017-02-07 | 2017-02-07 | 193 | George [80%] |
| 195 | Integración de la web en un servidor público | 5h | 2017-02-07 | 2017-02-07 | 194 | George [80%] |
| 196 | Búsqueda y análisis de Dashboards | 5h | 2017-02-07 | 2017-02-08 | 195 | Antonio [80%]; George [80%]; Jesús [80%] |
| 197 | **Google Analytics** | 0.88d | 2017-02-08 | 2017-02-09 | 196 |  |
| 198 | Introducir del código necesario en el código de la web | 3h | 2017-02-08 | 2017-02-08 |  | Antonio [80%]; George [80%]; Jesús [80%] |
| 199 | Familiarizarnos con el entorno | 4h | 2017-02-08 | 2017-02-09 | 198 | Antonio [80%]; George [80%]; Jesús [80%] |
| 200 | Registrar tiempos y % de realización de tareas | 8.5d | 2017-01-30 | 2017-02-10 |  | Antonio [10%]; George [10%]; Jesús [10%] |
| 201 | Comparar la planificación prevista con la real de la iteración 2 | 8.5d | 2017-01-30 | 2017-02-10 |  | Antonio [10%]; George [10%]; Jesús [10%] |
| 202 | Confeccionar informe de la iteración 2 | 0.5d | 2017-02-10 | 2017-02-10 | 200, 201 | Antonio [20%]; George [20%]; Jesús [20%] |
| 204 | Realización del árbol de la escena | 2.75d | 2017-02-10 | 2017-02-15 |  | Antonio [80%] |
| 205 | Crear el gestor de recursos | 2.2d | 2017-02-15 | 2017-02-17 | 204 | Antonio [80%] |
| 206 | Inclusión de la cámara | 2d | 2017-02-17 | 2017-02-21 | 205 | Antonio [80%] |
| 207 | Depuración de Errores | 2d | 2017-02-21 | 2017-02-23 | 206 | Antonio [80%] |
| 208 | Conversión de formatos | 4h | 2017-02-23 | 2017-02-24 | 207 | Antonio [80%] |
| 209 | Creación de la Base de Datos | 15h | 2017-02-10 | 2017-02-14 |  | George [80%] |
| 210 | Introducción de la API REST en el hosting | 1.25d | 2017-02-14 | 2017-02-15 | 209 | George [80%] |
| 211 | Creación de los informes semanales | 2.5h | 2017-02-15 | 2017-02-16 | 210 | George [80%]; Jesús [80%] |
| 212 | **Diseños de la interfaz** | 2.75d | 2017-02-16 | 2017-02-20 | 211 |  |
| 213 | Página Principal | 4h | 2017-02-16 | 2017-02-16 |  | George [80%]; Jesús [80%] |
| 214 | Inicio de Sesión | 3h | 2017-02-16 | 2017-02-17 | 213 | George [80%]; Jesús [80%] |
| 215 | Registro | 3h | 2017-02-17 | 2017-02-17 | 214 | George [80%]; Jesús [80%] |
| 216 | Perfil | 4h | 2017-02-17 | 2017-02-17 | 215 | George [80%]; Jesús [80%] |
| 217 | Todos los cursos | 4h | 2017-02-17 | 2017-02-20 | 216 | George [80%]; Jesús [80%] |
| 218 | Detalles Curso | 4h | 2017-02-20 | 2017-02-20 | 217 | George [80%]; Jesús [80%] |
| 219 | Perfeccionar Interfaces | 2.5d | 2017-02-20 | 2017-02-23 | 212 | George [80%]; Jesús [80%] |
| 220 | Instalación y comiendo de trabajo en R | 5h | 2017-02-23 | 2017-02-24 | 219 | George [80%]; Jesús [80%] |
| 221 | Deninir los objetivos de la asignatura | 3h | 2017-02-24 | 2017-02-24 | 220 | George [80%]; Jesús [80%]; Antonio [80%] |
| 222 | Estudio de Infografias | 2h | 2017-02-24 | 2017-02-24 | 221 | George [80%]; Jesús [80%]; Antonio [80%] |
| 223 | Registrar tiempos y % de realización de tareas | 9.5d | 2017-02-10 | 2017-02-24 |  | George [10%]; Jesús [10%]; Antonio [10%] |
| 224 | Comparar la planificación prevista con la real de la iteración 2 | 9.5d | 2017-02-10 | 2017-02-24 |  | Antonio [10%]; George [10%]; Jesús [10%] |
| 225 | Confeccionar informe de la iteración 2 | 0.5d | 2017-02-24 | 2017-02-24 | 223, 224 | George [20%]; Jesús [20%] |
| 227 | **Open Data** | 9d | 2017-02-24 | 2017-03-09 |  |  |
| 228 | Ver de donde recoger los datos necesarios | 1d | 2017-02-24 | 2017-02-27 |  | George [20%]; Jesús [20%] |
| 229 | Manipulación de los datos recogidos con R | 2d | 2017-02-27 | 2017-03-01 | 228 | George [20%]; Jesús [20%] |
| 230 | Recogida de datos con JSON | 2d | 2017-03-01 | 2017-03-03 | 229 | George [20%]; Jesús [20%] |
| 231 | Almacenamiento de esos datos en la BD | 2d | 2017-03-03 | 2017-03-07 | 230 | George [20%]; Jesús [20%] |
| 232 | Mostrar dichos datos en la web | 2d | 2017-03-07 | 2017-03-09 | 231 | George [20%]; Jesús [20%] |
| 233 | **Arreglo de errores** | 1.69d | 2017-02-24 | 2017-02-28 |  |  |
| 234 | árbol | 7.5h | 2017-02-24 | 2017-02-27 |  | Antonio [80%] |
| 235 | inclusión de la cámara | 6h | 2017-02-27 | 2017-02-28 | 234 | Antonio [80%] |
| 236 | Meter luces | 2d | 2017-02-28 | 2017-03-02 | 235 | Antonio [80%] |
| 237 | Interfaz multimedia entre el motor y el servidor | 2d | 2017-03-02 | 2017-03-06 | 236 | Antonio [80%] |
| 238 | Planificar Pseudolenguaje | 3d | 2017-03-06 | 2017-03-09 | 237 | Antonio [80%] |
| 239 | **Interfaz Pública** | 6.5d | 2017-02-24 | 2017-03-07 |  |  |
| 240 | Arreglar la parte de 'Cursos' | 1d | 2017-02-24 | 2017-02-27 |  | Jesús [60%] |
| 241 | Añadir detalles de las lecciones a 'Detalle Curso' | 1d | 2017-02-27 | 2017-02-28 | 240 | Jesús [60%] |
| 242 | Pantalla 'Evaluación Final' | 1.5d | 2017-02-28 | 2017-03-02 | 241 | Jesús [60%] |
| 243 | Pantalla 'Mis Cursos' | 1.5d | 2017-03-02 | 2017-03-03 | 242 | Jesús [60%] |
| 244 | Pantalla Ver Noticias | 1.5d | 2017-03-03 | 2017-03-07 | 243 | Jesús [60%] |
| 245 | **Interfaz Administrador** | 7.5d | 2017-02-24 | 2017-03-08 |  |  |
| 246 | Ver y añadir Cursos | 2.5d | 2017-02-24 | 2017-03-01 |  | George [60%] |
| 247 | Ver y añadir Noticias | 2.5d | 2017-03-01 | 2017-03-03 | 246 | George [60%] |
| 248 | Ver y gestionar Usuarios | 2.5d | 2017-03-03 | 2017-03-08 | 247 | George [60%] |
| 249 | Recoger datos de la BD y mostrarlos en la web | 1d | 2017-03-08 | 2017-03-09 | 248 | George [60%] |
| 250 | Conectar toda la web con la BD | 1d | 2017-03-09 | 2017-03-10 | 249 | George [60%] |
| 251 | Registrar tiempos y % de realización de tareas | 9.5d | 2017-02-24 | 2017-03-10 |  | George [10%]; Jesús [10%]; Antonio [10%] |
| 252 | Comparar la planificación prevista con la real de la iteración 2 | 9.5d | 2017-02-24 | 2017-03-10 |  | George [10%]; Jesús [10%]; Antonio [10%] |
| 253 | Confeccionar informe de la iteración 2 | 0.5d | 2017-03-10 | 2017-03-10 | 251, 252 | Antonio [20%]; George [20%]; Jesús [20%] |
| 256 | Registrar tiempos y % de realización de tareas | 9.5d | 2017-03-10 | 2017-03-24 |  |  |
| 257 | Comparar la planificación prevista con la real de la iteración 2 | 9.5d | 2017-03-10 | 2017-03-24 |  |  |
| 258 | Confeccionar informe de la iteración 2 | 0.5d | 2017-03-24 | 2017-03-24 | 256, 257 |  |
| 261 | Registrar tiempos y % de realización de tareas | 7.5d | 2017-03-24 | 2017-04-05 |  |  |
| 262 | Comparar la planificación prevista con la real de la iteración 2 | 7.5d | 2017-03-24 | 2017-04-05 |  |  |
| 263 | Confeccionar informe de la iteración 2 | 0.5d | 2017-04-05 | 2017-04-05 | 261, 262 |  |
| 271 | **Primer Cuatrimestre** | 0d | 2016-09-12 | 2016-09-12 |  |  |
| 278 | Técnicas Avanzadas de Gráficos | 1d? | 2016-09-12 | 2016-09-12 |  |  |

Changed:

| ID | Task | Start | Finish | Duration | Total float | Predecessors | Other |
| --- | --- | --- | --- | --- | --- | --- | --- |
| 176 | Revisar y preparar todos los entregables para la entrega |  |  |  | 0.25d → 1.5d | 170, 171 → 170 |  |
| 185 | HITO 2 | 2016-09-12 → 2016-12-26 (+105d) | 2016-09-12 → 2017-01-30 (+140d) | 1d? → 25.1d? | 73.4d → 0d | none → 55 | constraint none → finish no earlier than 2017-01-30 |
| 186 | **HITO 3** | 2016-09-12 → 2017-01-30 (+140d) | 2016-09-12 → 2017-04-05 (+205d) | 1d? → 47d? | 73.4d → 0d | none → 185 |  |
| 187 | **Iteración 1** | 2016-09-12 → 2017-01-30 (+140d) | 2016-09-12 → 2017-02-10 (+151d) | 1d? → 9d | 73.4d → 0d |  |  |
| 188 | Presupuesto TAG | 2016-09-12 → 2017-01-30 (+140d) | 2016-09-12 → 2017-01-31 (+141d) | 1d? → 4.69h | 73.4d → 1.29d |  | resources none → Antonio [80%]; George [80%]; Jesús [80%] |
| 191 | Shaber básico por programa | 2016-09-12 → 2017-02-01 (+142d) | 2016-09-12 → 2017-02-02 (+143d) | 1d? → 6h | 73.4d → 1.29d | none → 190 | resources none → Antonio [80%]; George [80%]; Jesús [80%] |
| 203 | **Iteración 2** | 2016-09-12 → 2017-02-10 (+151d) | 2016-09-12 → 2017-02-24 (+165d) | 1d? → 10d | 73.4d → 0d | none → 187 |  |
| 226 | **Iteración 3** | 2016-09-12 → 2017-02-24 (+165d) | 2016-09-12 → 2017-03-10 (+179d) | 1d? → 10d | 73.4d → 0d | none → 203 |  |
| 254 | **Iteración 4** | 2016-09-12 → 2017-03-10 (+179d) | 2016-09-12 → 2017-03-24 (+193d) | 1d? → 10d? | 73.4d → 0d | none → 226 |  |
| 255 | <Tarea nueva> | 2016-09-12 → 2017-03-10 (+179d) | 2016-09-12 → 2017-03-13 (+182d) |  | 73.4d → 9d |  |  |
| 259 | **Iteración 5** | 2016-09-12 → 2017-03-24 (+193d) | 2016-09-12 → 2017-04-05 (+205d) | 1d? → 8d? | 73.4d → 0d | none → 254 |  |
| 260 | <Tarea nueva> | 2016-09-12 → 2017-03-24 (+193d) | 2016-09-12 → 2017-03-27 (+196d) |  | 73.4d → 7d |  |  |
| 264 | **HITO 4** | 2016-09-12 → 2017-04-05 (+205d) | 2016-09-12 → 2017-04-06 (+206d) |  | 73.4d → 0d | none → 186 |  |
| 265 | Iteración 1 | 2016-09-12 → 2017-04-05 (+205d) | 2016-09-12 → 2017-04-06 (+206d) |  | 73.4d → 0d |  |  |
| 266 | Iteración 2 | 2016-09-12 → 2017-04-05 (+205d) | 2016-09-12 → 2017-04-06 (+206d) |  | 73.4d → 0d |  |  |
| 267 | Iteración 3 | 2016-09-12 → 2017-04-05 (+205d) | 2016-09-12 → 2017-04-06 (+206d) |  | 73.4d → 0d |  |  |
| 268 | Iteración 4 | 2016-09-12 → 2017-04-05 (+205d) | 2016-09-12 → 2017-04-06 (+206d) |  | 73.4d → 0d |  |  |
| 270 | **Colores de las asignaturas** |  |  | 0d → 1d? | none → 147.75d |  |  |

## Version 3 (saved 2017-02-27)

Note of the change: Informes de las iteraciones 1 y 2 del Hito 3

Last finish stays 2017-04-06.

Changed:

| ID | Task | Other |
| --- | --- | --- |
| 201 | Comparar la planificación prevista con la real de la iteración 1 | was named Comparar la planificación prevista con la real de la iteración 2 |
| 202 | Confeccionar informe de la iteración 1 | was named Confeccionar informe de la iteración 2 |
| 252 | Comparar la planificación prevista con la real de la iteración 3 | was named Comparar la planificación prevista con la real de la iteración 2 |
| 253 | Confeccionar informe de la iteración 3 | was named Confeccionar informe de la iteración 2 |
| 257 | Comparar la planificación prevista con la real de la iteración 4 | was named Comparar la planificación prevista con la real de la iteración 2 |
| 258 | Confeccionar informe de la iteración 4 | was named Confeccionar informe de la iteración 2 |
| 262 | Comparar la planificación prevista con la real de la iteración 5 | was named Comparar la planificación prevista con la real de la iteración 2 |
| 263 | Confeccionar informe de la iteración 5 | was named Confeccionar informe de la iteración 2 |

## Version 4 (saved 2017-03-14)

Note of the change: -introduccion de tareas completadas y duraciones reales

Last finish stays 2017-04-06. Complete tasks 81 → 121.

Changed:

| ID | Task | Start | Finish | Complete | Total float |
| --- | --- | --- | --- | --- | --- |
| 186 | **HITO 3** | 2017-01-30 A |  | 0% → 47% |  |
| 187 | **Iteración 1** | 2017-01-30 A | 2017-02-10 A | 0% → 100% | 0d → none |
| 188 | Presupuesto TAG | 2017-01-30 A | 2017-01-31 A | 0% → 100% | 1.29d → none |
| 189 | Repasar OpenGL | 2017-01-31 A | 2017-02-01 A | 0% → 100% | 1.29d → none |
| 190 | Empezar a ver WebGL | 2017-02-01 A | 2017-02-01 A | 0% → 100% | 1.29d → none |
| 191 | Shaber básico por programa | 2017-02-01 A | 2017-02-02 A | 0% → 100% | 1.29d → none |
| 192 | Crear la plantilla CSS de la web | 2017-02-02 A | 2017-02-06 A | 0% → 100% | 1.29d → none |
| 193 | Búsqueda de un nuevo nombre para el proyecto | 2017-02-06 A | 2017-02-07 A | 0% → 100% | 1.29d → none |
| 194 | Búsqueda y compra de un Dominio | 2017-02-07 A | 2017-02-07 A | 0% → 100% | 1.29d → none |
| 195 | Integración de la web en un servidor público | 2017-02-07 A | 2017-02-07 A | 0% → 100% | 1.29d → none |
| 196 | Búsqueda y análisis de Dashboards | 2017-02-07 A | 2017-02-08 A | 0% → 100% | 1.29d → none |
| 197 | **Google Analytics** | 2017-02-08 A | 2017-02-09 A | 0% → 100% | 1.29d → none |
| 198 | Introducir del código necesario en el código de la web | 2017-02-08 A | 2017-02-08 A | 0% → 100% | 1.29d → none |
| 199 | Familiarizarnos con el entorno | 2017-02-08 A | 2017-02-09 A | 0% → 100% | 1.29d → none |
| 200 | Registrar tiempos y % de realización de tareas | 2017-01-30 A | 2017-02-10 A | 0% → 100% | 0d → none |
| 201 | Comparar la planificación prevista con la real de la iteración 1 | 2017-01-30 A | 2017-02-10 A | 0% → 100% | 0d → none |
| 202 | Confeccionar informe de la iteración 1 | 2017-02-10 A | 2017-02-10 A | 0% → 100% | 0d → none |
| 203 | **Iteración 2** | 2017-02-10 A |  | 0% → 93% |  |
| 204 | Realización del árbol de la escena | 2017-02-10 A | 2017-02-15 A | 0% → 100% | 0.55d → none |
| 205 | Crear el gestor de recursos | 2017-02-15 A | 2017-02-17 A | 0% → 100% | 0.55d → none |
| 207 | Depuración de Errores | 2017-02-21 A | 2017-02-23 A | 0% → 100% | 0.55d → none |
| 208 | Conversión de formatos | 2017-02-23 A | 2017-02-24 A | 0% → 100% | 0.55d → none |
| 209 | Creación de la Base de Datos | 2017-02-10 A | 2017-02-14 A | 0% → 100% | 0.06d → none |
| 210 | Introducción de la API REST en el hosting | 2017-02-14 A | 2017-02-15 A | 0% → 100% | 0.06d → none |
| 211 | Creación de los informes semanales | 2017-02-15 A | 2017-02-16 A | 0% → 100% | 0.06d → none |
| 212 | **Diseños de la interfaz** | 2017-02-16 A | 2017-02-20 A | 0% → 100% | 0.06d → none |
| 213 | Página Principal | 2017-02-16 A | 2017-02-16 A | 0% → 100% | 0.06d → none |
| 214 | Inicio de Sesión | 2017-02-16 A | 2017-02-17 A | 0% → 100% | 0.06d → none |
| 215 | Registro | 2017-02-17 A | 2017-02-17 A | 0% → 100% | 0.06d → none |
| 216 | Perfil | 2017-02-17 A | 2017-02-17 A | 0% → 100% | 0.06d → none |
| 217 | Todos los cursos | 2017-02-17 A | 2017-02-20 A | 0% → 100% | 0.06d → none |
| 218 | Detalles Curso | 2017-02-20 A | 2017-02-20 A | 0% → 100% | 0.06d → none |
| 219 | Perfeccionar Interfaces | 2017-02-20 A | 2017-02-23 A | 0% → 100% | 0.06d → none |
| 221 | Deninir los objetivos de la asignatura | 2017-02-24 A | 2017-02-24 A | 0% → 100% | 0.06d → none |
| 222 | Estudio de Infografias | 2017-02-24 A | 2017-02-24 A | 0% → 100% | 0.06d → none |
| 223 | Registrar tiempos y % de realización de tareas | 2017-02-10 A | 2017-02-24 A | 0% → 100% | 0d → none |
| 224 | Comparar la planificación prevista con la real de la iteración 2 | 2017-02-10 A | 2017-02-24 A | 0% → 100% | 0d → none |
| 225 | Confeccionar informe de la iteración 2 | 2017-02-24 A | 2017-02-24 A | 0% → 100% | 0d → none |
| 226 | **Iteración 3** | 2017-02-24 A |  | 0% → 20% |  |
| 233 | **Arreglo de errores** | 2017-02-24 A | 2017-02-28 A | 0% → 100% | 1.31d → none |
| 234 | árbol | 2017-02-24 A | 2017-02-27 A | 0% → 100% | 1.31d → none |
| 235 | inclusión de la cámara | 2017-02-27 A | 2017-02-28 A | 0% → 100% | 1.31d → none |
| 236 | Meter luces | 2017-02-28 A | 2017-03-02 A | 0% → 100% | 1.31d → none |
| 237 | Interfaz multimedia entre el motor y el servidor | 2017-03-02 A | 2017-03-06 A | 0% → 100% | 1.31d → none |
| 238 | Planificar Pseudolenguaje | 2017-03-06 A |  | 0% → 25% |  |
| 239 | **Interfaz Pública** | 2017-02-24 A |  | 0% → 62% |  |
| 240 | Arreglar la parte de 'Cursos' | 2017-02-24 A | 2017-02-27 A | 0% → 100% | 3.5d → none |
| 243 | Pantalla 'Mis Cursos' | 2017-03-02 A | 2017-03-03 A | 0% → 100% | 3.5d → none |
| 244 | Pantalla Ver Noticias | 2017-03-03 A | 2017-03-07 A | 0% → 100% | 3.5d → none |

## Version 5 (saved 2017-03-28)

Note of the change: Entregables Hito 3

Last finish stays 2017-04-06. Complete tasks 121 → 129.

Added:

| ID | Task | Duration | Start | Finish | Predecessors | Resources |
| --- | --- | --- | --- | --- | --- | --- |
| 255 | **Open Data** | 9d | 2017-03-10 | 2017-03-23 |  |  |
| 256 | Ver de donde recoger los datos necesarios | 1d | 2017-03-10 | 2017-03-13 |  | George [10%]; Jesús [10%]; Antonio [10%] |
| 257 | Manipulación de los datos recogidos con R | 2d | 2017-03-13 | 2017-03-15 | 256 | George [10%]; Jesús [10%]; Antonio [10%] |
| 258 | Recogida de datos con JSON | 2d | 2017-03-15 | 2017-03-17 | 257 | George [10%]; Jesús [10%]; Antonio [10%] |
| 259 | Almacenamiento de esos datos en la BD | 2d | 2017-03-17 | 2017-03-21 | 258 | George [10%]; Jesús [10%]; Antonio [10%] |
| 260 | Mostrar dichos datos en la web | 2d | 2017-03-21 | 2017-03-23 | 259 | George [10%]; Jesús [10%]; Antonio [10%] |
| 261 | Animaciones | 2.5d | 2017-03-10 | 2017-03-15 |  | George [35%]; Antonio [35%]; Jesús [35%] |
| 262 | Conseguir que las transformaciones se apliqueb a la malla | 3d | 2017-03-15 | 2017-03-20 | 261 | George [35%]; Antonio [35%]; Jesús [35%] |
| 264 | **Interfaz Administrador** | 3d | 2017-03-10 | 2017-03-15 |  |  |
| 265 | Pulir detalles de diseño | 1d | 2017-03-10 | 2017-03-13 |  | George [35%]; Antonio [35%]; Jesús [35%] |
| 266 | Arreglar el boton de borrado | 1d | 2017-03-13 | 2017-03-14 | 265 | George [35%]; Antonio [35%]; Jesús [35%] |
| 267 | Introducir 'Lección' desde 'Curso' | 1d | 2017-03-14 | 2017-03-15 | 266 | George [35%]; Antonio [35%]; Jesús [35%] |
| 268 | **Pantalla Dividida** | 3.25d | 2017-03-15 | 2017-03-20 | 264 |  |
| 269 | Recoger leccion de la BD y mostarla en la primera pantalla | 4h | 2017-03-15 | 2017-03-16 |  | George [35%]; Antonio [35%]; Jesús [35%] |
| 270 | Crear el diseño | 1d | 2017-03-16 | 2017-03-17 | 269 | George [35%]; Antonio [35%]; Jesús [35%] |
| 271 | Probar funcionamiento | 1d | 2017-03-17 | 2017-03-20 | 270 | George [35%]; Antonio [35%]; Jesús [35%] |
| 272 | Comprobar las salidas | 6h | 2017-03-20 | 2017-03-20 | 271 | George [35%]; Antonio [35%]; Jesús [35%] |
| 273 | **Interfaz pública** | 3.62d | 2017-03-21 | 2017-03-24 | 268 |  |
| 274 | Recoger todos los datos de la BD | 7h | 2017-03-21 | 2017-03-21 |  | George [35%]; Antonio [35%]; Jesús [35%] |
| 275 | Ajustar diseño | 6h | 2017-03-21 | 2017-03-22 | 274 | George [35%]; Antonio [35%]; Jesús [35%] |
| 276 | Acabar pantalla tipo test | 1d | 2017-03-22 | 2017-03-23 | 275 | George [35%]; Antonio [35%]; Jesús [35%] |
| 277 | Pulir detalles de diseño | 4h | 2017-03-23 | 2017-03-24 | 276 | George [35%]; Antonio [35%]; Jesús [35%] |
| 278 | Pulir detalles de funcionamiento | 4h | 2017-03-24 | 2017-03-24 | 277 | George [35%]; Antonio [35%]; Jesús [35%] |

Changed:

| ID | Task | Start | Finish | Duration | Complete | Total float | Predecessors | Other |
| --- | --- | --- | --- | --- | --- | --- | --- | --- |
| 186 | **HITO 3** |  |  |  | 47% → 56% |  |  |  |
| 226 | **Iteración 3** |  |  |  | 20% → 74% |  |  |  |
| 239 | **Interfaz Pública** |  |  |  | 62% → 77% |  |  |  |
| 241 | Añadir detalles de las lecciones a 'Detalle Curso' | 2017-02-27 A | 2017-02-28 A |  | 0% → 100% | 6.5d → none |  |  |
| 245 | **Interfaz Administrador** | 2017-02-24 A | 2017-03-08 A |  | 0% → 100% | 0.5d → none |  |  |
| 246 | Ver y añadir Cursos | 2017-02-24 A | 2017-03-01 A |  | 0% → 100% | 0.5d → none |  |  |
| 247 | Ver y añadir Noticias | 2017-03-01 A | 2017-03-03 A |  | 0% → 100% | 0.5d → none |  |  |
| 248 | Ver y gestionar Usuarios | 2017-03-03 A | 2017-03-08 A |  | 0% → 100% | 0.5d → none |  |  |
| 250 | Conectar toda la web con la BD | 2017-03-09 A | 2017-03-10 A |  | 0% → 100% | 0.5d → none |  |  |
| 251 | Registrar tiempos y % de realización de tareas | 2017-02-24 A | 2017-03-10 A |  | 0% → 100% | 0d → none |  |  |
| 252 | Comparar la planificación prevista con la real de la iteración 3 | 2017-02-24 A | 2017-03-10 A |  | 0% → 100% | 0d → none |  |  |
| 253 | Confeccionar informe de la iteración 3 | 2017-03-10 A | 2017-03-10 A |  | 0% → 100% | 0d → none |  |  |
| 254 | **Iteración 4** |  |  | 10d? → 10d |  |  |  |  |
| 263 | Planificar Pseudolenguaje | 2017-03-10 → 2017-03-20 (+10d) | 2017-03-13 → 2017-03-22 (+9d) | 1d? → 2d |  | 9d → 2.5d | none → 262 | was named <Tarea nueva>; resources none → George [35%]; Antonio [35%]; Jesús [35%] |
| 279 | Registrar tiempos y % de realización de tareas |  |  |  |  |  |  | resources none → George [10%]; Antonio [10%]; Jesús [10%] |
| 280 | Comparar la planificación prevista con la real de la iteración 4 |  |  |  |  |  |  | resources none → George [10%]; Antonio [10%]; Jesús [10%] |
| 281 | Confeccionar informe de la iteración 4 |  |  |  |  |  |  | resources none → Antonio [20%]; George [20%]; Jesús [20%] |
| 282 | **Iteración 5** |  |  | 8d? → 8d |  | 0d → none |  |  |

## Version 6 (saved 2017-05-23)

Note of the change: Tareas de todas las iteraciones restantes del Hito 4

Last finish 2017-04-06 → 2017-05-26 (+50d).

Added:

| ID | Task | Duration | Start | Finish | Predecessors | Constraint | Resources |
| --- | --- | --- | --- | --- | --- | --- | --- |
| 289 | **Curso Gráficos(SDM y E-le)** | 2.25d | 2017-04-05 | 2017-04-07 |  |  |  |
| 290 | Definir las primeras ideas para el pseudocodigo | 6h | 2017-04-05 | 2017-04-06 |  |  | George [80%]; Antonio [80%]; Jesús [80%] |
| 291 | Definir la esctructura | 6h | 2017-04-06 | 2017-04-07 | 290 |  | George [80%]; Antonio [80%]; Jesús [80%]; Sergio; Dani |
| 292 | Pensar en ejercicios | 6h | 2017-04-07 | 2017-04-07 | 291 |  | George [80%]; Antonio [80%]; Jesús [80%]; Sergio; Dani |
| 293 | **Métodos del 'Pseudocódigo'** | 1.5d | 2017-04-10 | 2017-04-11 | 289 |  |  |
| 294 | Girar Objeto | 6h | 2017-04-10 | 2017-04-10 |  |  | George [80%]; Antonio [80%]; Jesús [80%] |
| 295 | Mover Objeto | 6h | 2017-04-10 | 2017-04-11 | 294 |  | George [80%]; Antonio [80%]; Jesús [80%] |
| 296 | Pensar en como hacer la visualización de la escena | 3h | 2017-04-11 | 2017-04-11 | 293 |  | George [80%]; Antonio [80%]; Jesús [80%] |
| 297 | Introducir las luces | 13h | 2017-04-11 | 2017-04-13 | 296 |  | George [80%]; Antonio [80%]; Jesús [80%] |
| 298 | Definir KPI's | 3h | 2017-04-13 | 2017-04-13 | 297 |  | George [80%]; Antonio [80%]; Jesús [80%] |
| 299 | **Crear Árbol para la venta del curso** | 3.25d | 2017-04-13 | 2017-04-19 | 298 |  |  |
| 300 | Definir los objetivos estratégicos | 4h | 2017-04-13 | 2017-04-14 |  |  | George [80%]; Antonio [80%]; Jesús [80%] |
| 301 | Definir los objetivos decisionales | 4h | 2017-04-14 | 2017-04-14 | 300 |  | George [80%]; Antonio [80%]; Jesús [80%] |
| 302 | Definir los objetivos de información | 4h | 2017-04-14 | 2017-04-17 | 301 |  | George [80%]; Antonio [80%]; Jesús [80%] |
| 303 | Definir los requisitos de información | 7h | 2017-04-17 | 2017-04-18 | 302 |  | George [80%]; Antonio [80%]; Jesús [80%] |
| 304 | Definir el contexto y las medidas | 7h | 2017-04-18 | 2017-04-19 | 303 |  | George [80%]; Antonio [80%]; Jesús [80%] |
| 305 | Registrar tiempos y % de realización de tareas | 9.5d | 2017-04-05 | 2017-04-19 |  |  | George [10%]; Antonio [10%]; Jesús [10%] |
| 306 | Comparar la planificación prevista con la real de la iteración 1 | 9.5d | 2017-04-05 | 2017-04-19 |  |  | George [10%]; Antonio [10%]; Jesús [10%] |
| 307 | Confeccionar informe de la iteración 1 | 0.5d | 2017-04-19 | 2017-04-19 | 305, 306 |  | Antonio [20%]; George [20%]; Jesús [20%] |
| 309 | **Métodos del 'Pseudocódigo'** | 2d | 2017-04-19 | 2017-04-21 |  |  |  |
| 310 | Escalar Objeto | 1d | 2017-04-19 | 2017-04-20 |  |  | George [80%]; Antonio [80%]; Jesús [80%] |
| 311 | Mover Cámara | 1d | 2017-04-20 | 2017-04-21 | 310 |  | George [80%]; Antonio [80%]; Jesús [80%] |
| 312 | Mejoras en el árbol de la escena | 5h | 2017-04-21 | 2017-04-24 | 309 |  | George [80%]; Antonio [80%]; Jesús [80%] |
| 313 | Definir la visualización de la escena | 5h | 2017-04-24 | 2017-04-24 | 312 |  | George [80%]; Antonio [80%]; Jesús [80%] |
| 314 | Mejorar el rendimiento del Motor | 6h | 2017-04-25 | 2017-04-25 | 313 |  | George [80%]; Antonio [80%]; Jesús [80%] |
| 315 | Optimizar el árbol | 6h | 2017-04-25 | 2017-04-26 | 314 |  | George [80%]; Antonio [80%]; Jesús [80%] |
| 316 | Finalización del pseudo-código | 1.5d | 2017-04-26 | 2017-04-27 | 315 |  | George [80%]; Antonio [80%]; Jesús [80%] |
| 317 | Funcionamiento e integración de la API de Facebook(Login) | 1d | 2017-04-28 | 2017-04-28 | 316 |  | George [80%]; Antonio [80%]; Jesús [80%] |
| 318 | **Curso Gráficos(SDM y E-le)** | 2d | 2017-05-01 | 2017-05-02 | 317 |  |  |
| 319 | Comienzo del curso de Gráficos | 1d | 2017-05-01 | 2017-05-01 |  |  | George [80%]; Antonio [80%]; Jesús [80%]; Sergio |
| 320 | Comienzo del curso de Programación(JavaScript) | 1d | 2017-05-02 | 2017-05-02 | 319 |  | George [80%]; Antonio [80%]; Jesús [80%]; Sergio |
| 321 | Registrar tiempos y % de realización de tareas | 9.5d | 2017-04-19 | 2017-05-03 |  |  | George [10%]; Antonio [10%]; Jesús [10%] |
| 322 | Comparar la planificación prevista con la real de la iteración 2 | 9.5d | 2017-04-19 | 2017-05-03 |  |  | George [10%]; Antonio [10%]; Jesús [10%] |
| 323 | Confeccionar informe de la iteración 2 | 0.5d | 2017-05-03 | 2017-05-03 | 321, 322 |  | Antonio [20%]; George [20%]; Jesús [20%] |
| 325 | **Funcionamiento de la parte pública** | 3.88d | 2017-05-03 | 2017-05-09 |  |  |  |
| 326 | Definir los descuentos de los cursos | 3h | 2017-05-03 | 2017-05-04 |  |  | George [80%]; Antonio [80%]; Jesús [80%] |
| 327 | Hacer la pantalla del carrito de compra | 3h | 2017-05-04 | 2017-05-04 | 326 |  | George [80%]; Antonio [80%]; Jesús [80%] |
| 328 | Definir el funcionamiento de los cursos al añadirlos a la cesta | 2h | 2017-05-04 | 2017-05-04 | 327 |  | George [80%]; Antonio [80%]; Jesús [80%] |
| 329 | Definir una pantalla intermedia para el TPV | 3h | 2017-05-04 | 2017-05-05 | 328 |  | George [80%]; Antonio [80%]; Jesús [80%] |
| 330 | Creación de la Factura en la Base de Datos | 3h | 2017-05-05 | 2017-05-05 | 329 |  | George [80%]; Antonio [80%]; Jesús [80%] |
| 331 | Mensaje de confirmación | 1h | 2017-05-05 | 2017-05-05 | 330 |  | George [80%]; Antonio [80%]; Jesús [80%] |
| 332 | Generación de la Factura en PDF | 2d | 2017-05-05 | 2017-05-09 | 331 |  | George [80%]; Antonio [80%]; Jesús [80%] |
| 333 | Añadido de todas las lecciones del Curso de Gráficos | 1.3d | 2017-05-09 | 2017-05-10 | 325 |  | George [80%]; Antonio [80%]; Jesús [80%]; Sergio |
| 334 | Definición de los ejercicios de del curso de Gráficos | 4h | 2017-05-10 | 2017-05-11 | 333 |  | George [80%]; Antonio [80%]; Jesús [80%]; Sergio |
| 335 | Definir las soluciónes para el pseudocódigo del curso de Gráficos | 6h | 2017-05-11 | 2017-05-12 | 334 |  | George [80%]; Antonio [80%]; Jesús [80%] |
| 336 | Mejoras del árlbol | 4h | 2017-05-12 | 2017-05-12 | 335 |  | George [80%]; Antonio [80%]; Jesús [80%] |
| 337 | Remaquetación de las tres pantallas del curso | 1.8d | 2017-05-12 | 2017-05-16 | 336 |  | George [80%]; Antonio [80%]; Jesús [80%] |
| 338 | **Creación del Avatar(Pila)** | 1.12d | 2017-05-16 | 2017-05-17 | 337 |  |  |
| 339 | Animación | 3h | 2017-05-16 | 2017-05-16 |  |  | George [80%]; Antonio [80%]; Jesús [80%] |
| 340 | Textura | 3h | 2017-05-16 | 2017-05-17 | 339 |  | George [80%]; Antonio [80%]; Jesús [80%] |
| 341 | Malla | 3h | 2017-05-17 | 2017-05-17 | 340 |  | George [80%]; Antonio [80%]; Jesús [80%] |
| 342 | Registrar tiempos y % de realización de tareas | 9.5d | 2017-05-03 | 2017-05-17 |  | start no earlier than 2017-05-02 | George [10%]; Antonio [10%]; Jesús [10%] |
| 343 | Comparar la planificación prevista con la real de la iteración 3 | 9.5d | 2017-05-03 | 2017-05-17 |  |  | George [10%]; Antonio [10%]; Jesús [10%] |
| 344 | Confeccionar informe de la iteración 3 | 0.5d | 2017-05-17 | 2017-05-17 | 342, 343 |  | Antonio [20%]; George [20%]; Jesús [20%] |
| 346 | Hacer el funcionamiento de la API Google | 5h | 2017-05-17 | 2017-05-18 |  |  | George [80%]; Antonio [80%]; Jesús [80%] |
| 347 | Envio de email de verificación al crear un usuario | 4h | 2017-05-18 | 2017-05-18 | 346 |  | George [80%]; Antonio [80%]; Jesús [80%] |
| 348 | Recuperación de contraseña | 4h | 2017-05-18 | 2017-05-19 | 347 |  | George [80%]; Antonio [80%]; Jesús [80%] |
| 349 | Redefinir el funcionamiento de las Noticias en Funcióon del usuario | 1d? | 2017-05-19 | 2017-05-22 | 348 |  | George [80%]; Antonio [80%]; Jesús [80%] |
| 350 | Redefinición del Motor de Búsqueda | 4h | 2017-05-22 | 2017-05-22 | 349 |  | George [80%]; Antonio [80%]; Jesús [80%] |
| 351 | **Curso Gráficos** | 2.38d | 2017-05-22 | 2017-05-25 | 350 |  |  |
| 352 | Maquetar las lecciones | 7h | 2017-05-22 | 2017-05-23 |  |  | George [80%]; Antonio [80%]; Jesús [80%] |
| 353 | Maquetar los Ejercicios | 7h | 2017-05-23 | 2017-05-24 | 352 |  | George [80%]; Antonio [80%]; Jesús [80%] |
| 354 | Maquetar las Soluciones | 5h | 2017-05-24 | 2017-05-25 | 353 |  | George [80%]; Antonio [80%]; Jesús [80%] |
| 355 | Juntarlo Todo | 1.5d | 2017-05-25 | 2017-05-26 | 351 |  | George [80%]; Antonio [80%]; Jesús [80%] |
| 356 | Registrar tiempos y % de realización de tareas | 6.5d | 2017-05-17 | 2017-05-26 |  | start no earlier than 2017-05-02 | George [10%]; Antonio [10%]; Jesús [10%] |
| 357 | Comparar la planificación prevista con la real de la iteración 4 | 6.5d | 2017-05-17 | 2017-05-26 |  |  | George [10%]; Antonio [10%]; Jesús [10%] |
| 358 | Confeccionar informe de la iteración 4 | 0.5d | 2017-05-26 | 2017-05-26 | 356, 357 |  | Antonio [20%]; George [20%]; Jesús [20%] |

Changed:

| ID | Task | Start | Finish | Duration | Predecessors |
| --- | --- | --- | --- | --- | --- |
| 287 | **HITO 4** |  | 2017-04-06 → 2017-05-26 (+50d) | 1d? → 37d? |  |
| 288 | **Iteración 1** |  | 2017-04-06 → 2017-04-19 (+13d) | 1d? → 10d |  |
| 308 | **Iteración 2** | 2017-04-05 → 2017-04-19 (+14d) | 2017-04-06 → 2017-05-03 (+27d) | 1d? → 10d | none → 288 |
| 324 | **Iteración 3** | 2017-04-05 → 2017-05-03 (+28d) | 2017-04-06 → 2017-05-17 (+41d) | 1d? → 10d | none → 308 |
| 345 | **Iteración 4** | 2017-04-05 → 2017-05-17 (+42d) | 2017-04-06 → 2017-05-26 (+50d) | 1d? → 7d? | none → 324 |
